# HYPERSCALE_CAMPUS

How a schedule from Primavera P6 changed from version to version. A marks actual dates.

## Version 1 (data date 2025-09-08, saved 2025-09-08, file week_01.xer)

Note of the change: Ship end-to-end Baseline with Streamlit dashboard and 3D campus viz.

| ID | Task | Duration | Start | Finish | Predecessors | Complete | Total float | Constraint |
| --- | --- | --- | --- | --- | --- | --- | --- | --- |
| M000 | Notice to proceed | 0d | 2025-09-01 A | 2025-09-01 A |  | 100% |  |  |
| A800 | Building A energized | 0d | 2026-06-01 | 2026-06-01 | A440, E410 |  | 10d | finish on or before 2026-06-15 |
| A900 | Building A ready for service | 0d | 2026-09-21 | 2026-09-21 | A730 |  | 10d | finish on or before 2026-10-05 |
| B800 | Building B energized | 0d | 2026-06-30 | 2026-06-30 | B440, E410 |  | 10d | finish on or before 2026-07-14 |
| B900 | Building B ready for service | 0d | 2026-10-26 | 2026-10-26 | B730 |  | 0d | finish on or before 2026-11-09 |
| S100 | Site clearing | 14d | 2025-09-01 A | 2025-09-18 | M000 | 36% | 0d |  |
| S110 | Mass grading | 21d | 2025-09-19 | 2025-10-17 | S100 |  | 0d |  |
| S120 | Underground utilities | 28d | 2025-10-20 | 2025-11-26 | S110 |  | 0d |  |
| P300 | Switchgear fabrication and delivery | 138d | 2025-09-01 A | 2026-03-11 | M000 | 4% | 19d |  |
| P310 | Transformer fabrication and delivery | 154d | 2025-09-01 A | 2026-04-02 | M000 | 3% | 10d |  |
| P320 | Generator fabrication and delivery | 160d | 2025-09-01 A | 2026-04-10 | M000 | 3% | 49d |  |
| P330 | Chiller fabrication and delivery | 112d | 2025-09-01 A | 2026-02-03 | M000 | 4% | 41d |  |
| P340 | UPS fabrication and delivery | 98d | 2025-09-01 A | 2026-01-21 | M000 |  | 99d |  |
| E400 | Substation civil and structure | 56d | 2025-11-27 | 2026-02-12 | S120 |  | 45d |  |
| E410 | Utility interconnect | 42d | 2026-02-13 | 2026-04-13 | E400 |  | 45d |  |
| E420 | Set and test main transformers | 14d | 2026-04-03 | 2026-04-22 | E400, P310 |  | 10d |  |
| E450 | Set and test generators | 21d | 2026-04-13 | 2026-05-11 | P320, E400 |  | 49d |  |
| A200 | Building A foundations | 35d | 2025-11-03 | 2025-12-19 | S120 SS+10d |  | 10d |  |
| A210 | Building A steel erection | 42d | 2025-12-22 | 2026-02-17 | A200 |  | 10d |  |
| A220 | Building A roofing | 21d | 2026-02-18 | 2026-03-18 | A210 |  | 10d |  |
| A230 | Building A envelope and façade | 35d | 2026-01-05 | 2026-02-20 | A210 SS+10d |  | 28d |  |
| A430 | Building A install switchgear | 21d | 2026-03-19 | 2026-04-16 | A220, P300 |  | 14d |  |
| A440 | Building A medium-voltage feeders | 28d | 2026-04-23 | 2026-06-01 | A430, E420 |  | 10d |  |
| A500 | Building A install chillers | 28d | 2026-03-19 | 2026-04-27 | P330, A220 |  | 10d |  |
| A510 | Building A CRAH units | 21d | 2026-02-23 | 2026-03-23 | A230 |  | 70d |  |
| A520 | Building A chilled water piping | 35d | 2026-04-28 | 2026-06-15 | A500 |  | 10d |  |
| A600 | Building A raised floor and containment | 28d | 2026-02-23 | 2026-04-01 | A230 |  | 28d |  |
| A610 | Building A cable tray | 21d | 2026-04-02 | 2026-04-30 | A600 |  | 28d |  |
| A620 | Building A UPS installation | 14d | 2026-05-01 | 2026-05-20 | A610, P340 |  | 28d |  |
| A700 | Building A L2 installation checks | 14d | 2026-06-16 | 2026-07-03 | A800, A520, A510, A620 |  | 10d |  |
| A710 | Building A L3 startup | 21d | 2026-07-06 | 2026-08-03 | E450, A700 |  | 10d |  |
| A720 | Building A L4 functional testing | 21d | 2026-08-04 | 2026-09-01 | A710 |  | 10d |  |
| A730 | Building A L5 integrated systems test | 14d | 2026-09-02 | 2026-09-21 | A720 |  | 10d |  |
| B200 | Building B foundations | 35d | 2025-12-08 | 2026-01-23 | S120 SS+35d |  | 0d |  |
| B210 | Building B steel erection | 42d | 2026-01-26 | 2026-03-24 | B200 |  | 0d |  |
| B220 | Building B roofing | 21d | 2026-03-25 | 2026-04-22 | B210 |  | 0d |  |
| B230 | Building B envelope and façade | 35d | 2026-02-09 | 2026-03-27 | B210 SS+10d |  | 18d |  |
| B430 | Building B install switchgear | 21d | 2026-04-23 | 2026-05-21 | B220, P300 |  | 10d |  |
| B440 | Building B medium-voltage feeders | 28d | 2026-05-22 | 2026-06-30 | B430, E420 |  | 10d |  |
| B500 | Building B install chillers | 28d | 2026-04-23 | 2026-06-01 | P330, B220 |  | 0d |  |
| B510 | Building B CRAH units | 21d | 2026-03-30 | 2026-04-27 | B230 |  | 60d |  |
| B520 | Building B chilled water piping | 35d | 2026-06-02 | 2026-07-20 | B500 |  | 0d |  |
| B600 | Building B raised floor and containment | 28d | 2026-03-30 | 2026-05-06 | B230 |  | 18d |  |
| B610 | Building B cable tray | 21d | 2026-05-07 | 2026-06-04 | B600 |  | 18d |  |
| B620 | Building B UPS installation | 14d | 2026-06-05 | 2026-06-24 | B610, P340 |  | 18d |  |
| B700 | Building B L2 installation checks | 14d | 2026-07-21 | 2026-08-07 | B800, B520, B510, B620 |  | 0d |  |
| B710 | Building B L3 startup | 21d | 2026-08-10 | 2026-09-07 | E450, B700 |  | 0d |  |
| B720 | Building B L4 functional testing | 21d | 2026-09-08 | 2026-10-06 | B710 |  | 0d |  |
| B730 | Building B L5 integrated systems test | 14d | 2026-10-07 | 2026-10-26 | B720 |  | 0d |  |

## Version 2 (data date 2025-09-15, saved 2025-09-15, file week_02.xer)

Note of the change: Ship end-to-end Baseline with Streamlit dashboard and 3D campus viz.

Last finish stays 2026-10-26.

Changed:

| ID | Task | Start | Finish | Duration | Complete | Total float |
| --- | --- | --- | --- | --- | --- | --- |
| S100 | Site clearing |  |  |  | 36% → 71% |  |
| P300 | Switchgear fabrication and delivery |  | 2026-03-11 → 2026-03-23 (+12d) |  | 4% → 1% | 19d → 11d |
| P310 | Transformer fabrication and delivery |  |  |  | 3% → 6% |  |
| P320 | Generator fabrication and delivery |  |  |  | 3% → 6% |  |
| P330 | Chiller fabrication and delivery |  |  |  | 4% → 9% |  |
| P340 | UPS fabrication and delivery |  | 2026-01-21 → 2026-02-02 (+12d) | 98d → 106d | 0% → 5% | 99d → 91d |
| A430 | Building A install switchgear | 2026-03-19 → 2026-03-24 (+5d) | 2026-04-16 → 2026-04-21 (+5d) |  |  | 14d → 11d |

## Version 3 (data date 2025-09-22, saved 2025-09-22, file week_03.xer)

Note of the change: Ship end-to-end Baseline with Streamlit dashboard and 3D campus viz.

Last finish stays 2026-10-26. Complete tasks 1 → 2.

Changed:

| ID | Task | Start | Finish | Complete | Total float |
| --- | --- | --- | --- | --- | --- |
| S100 | Site clearing |  | 2025-09-18 A | 71% → 100% | 0d → none |
| S110 | Mass grading | 2025-09-19 A |  | 0% → 5% |  |
| P300 | Switchgear fabrication and delivery |  |  | 1% → 5% |  |
| P310 | Transformer fabrication and delivery |  |  | 6% → 10% |  |
| P320 | Generator fabrication and delivery |  | 2026-04-10 → 2026-05-08 (+28d) | 6% → 0% | 49d → 29d |
| P330 | Chiller fabrication and delivery |  | 2026-02-03 → 2026-02-10 (+7d) |  | 41d → 36d |
| P340 | UPS fabrication and delivery |  |  | 5% → 9% |  |
| E450 | Set and test generators | 2026-04-13 → 2026-05-11 (+28d) | 2026-05-11 → 2026-06-08 (+28d) |  | 49d → 29d |

## Version 4 (data date 2025-09-29, saved 2025-09-29, file week_04.xer)

Note of the change: Ship end-to-end Baseline with Streamlit dashboard and 3D campus viz.

Last finish stays 2026-10-26.

Changed:

| ID | Task | Complete |
| --- | --- | --- |
| S110 | Mass grading | 5% → 29% |
| P300 | Switchgear fabrication and delivery | 5% → 9% |
| P310 | Transformer fabrication and delivery | 10% → 13% |
| P330 | Chiller fabrication and delivery | 9% → 13% |
| P340 | UPS fabrication and delivery | 9% → 14% |

## Version 5 (data date 2025-10-06, saved 2025-10-06, file week_05.xer)

Note of the change: Ship end-to-end Baseline with Streamlit dashboard and 3D campus viz.

Last finish stays 2026-10-26.

Changed:

| ID | Task | Start | Finish | Complete | Total float |
| --- | --- | --- | --- | --- | --- |
| A800 | Building A energized | 2026-06-01 → 2026-06-15 (+14d) | 2026-06-01 → 2026-06-15 (+14d) |  | 10d → 0d |
| S110 | Mass grading |  |  | 29% → 52% |  |
| P300 | Switchgear fabrication and delivery |  |  | 9% → 12% |  |
| P310 | Transformer fabrication and delivery |  | 2026-04-02 → 2026-04-16 (+14d) | 13% → 10% | 10d → 0d |
| P320 | Generator fabrication and delivery |  |  | 0% → 3% |  |
| P330 | Chiller fabrication and delivery |  |  | 13% → 18% |  |
| P340 | UPS fabrication and delivery |  |  | 14% → 19% |  |
| E420 | Set and test main transformers | 2026-04-03 → 2026-04-17 (+14d) | 2026-04-22 → 2026-05-06 (+14d) |  | 10d → 0d |
| A440 | Building A medium-voltage feeders | 2026-04-23 → 2026-05-07 (+14d) | 2026-06-01 → 2026-06-15 (+14d) |  | 10d → 0d |

## Version 6 (data date 2025-10-13, saved 2025-10-13, file week_06.xer)

Note of the change: Ship end-to-end Baseline with Streamlit dashboard and 3D campus viz.

Last finish stays 2026-10-26.

Changed:

| ID | Task | Start | Finish | Complete | Total float |
| --- | --- | --- | --- | --- | --- |
| S110 | Mass grading |  |  | 52% → 76% |  |
| P300 | Switchgear fabrication and delivery |  |  | 12% → 16% |  |
| P310 | Transformer fabrication and delivery |  |  | 10% → 13% |  |
| P320 | Generator fabrication and delivery |  | 2026-05-08 → 2026-05-29 (+21d) | 3% → 0% | 29d → 14d |
| P330 | Chiller fabrication and delivery |  |  | 18% → 22% |  |
| P340 | UPS fabrication and delivery |  |  | 19% → 24% |  |
| E450 | Set and test generators | 2026-05-11 → 2026-06-01 (+21d) | 2026-06-08 → 2026-06-29 (+21d) |  | 29d → 14d |

## Version 7 (data date 2025-10-20, saved 2025-10-20, file week_07.xer)

Note of the change: Ship end-to-end Baseline with Streamlit dashboard and 3D campus viz.

Last finish stays 2026-10-26. Complete tasks 2 → 3.

Changed:

| ID | Task | Finish | Complete | Total float |
| --- | --- | --- | --- | --- |
| S110 | Mass grading | 2025-10-17 A | 76% → 100% | 0d → none |
| P300 | Switchgear fabrication and delivery |  | 16% → 20% |  |
| P310 | Transformer fabrication and delivery |  | 13% → 16% |  |
| P330 | Chiller fabrication and delivery |  | 22% → 27% |  |
| P340 | UPS fabrication and delivery |  | 24% → 28% |  |

## Version 8 (data date 2025-10-27, saved 2025-10-27, file week_08.xer)

Note of the change: Ship end-to-end Baseline with Streamlit dashboard and 3D campus viz.

Last finish stays 2026-10-26.

Changed:

| ID | Task | Start | Finish | Complete | Total float |
| --- | --- | --- | --- | --- | --- |
| S120 | Underground utilities | 2025-10-20 A |  | 0% → 18% | 0d → -5d |
| P300 | Switchgear fabrication and delivery |  |  | 20% → 23% |  |
| P310 | Transformer fabrication and delivery |  |  | 16% → 19% |  |
| P320 | Generator fabrication and delivery |  |  | 0% → 3% |  |
| P330 | Chiller fabrication and delivery |  | 2026-02-10 → 2026-02-24 (+14d) | 27% → 22% | 36d → 26d |
| P340 | UPS fabrication and delivery |  |  | 28% → 33% |  |

## Version 9 (data date 2025-11-03, saved 2025-11-03, file week_09.xer)

Note of the change: Ship end-to-end Baseline with Streamlit dashboard and 3D campus viz.

Last finish stays 2026-10-26.

Changed:

| ID | Task | Start | Finish | Complete | Total float |
| --- | --- | --- | --- | --- | --- |
| A800 | Building A energized | 2026-06-15 → 2026-07-06 (+21d) | 2026-06-15 → 2026-07-06 (+21d) |  | 0d → -15d |
| A900 | Building A ready for service | 2026-09-21 → 2026-10-12 (+21d) | 2026-09-21 → 2026-10-12 (+21d) |  | 10d → -5d |
| B800 | Building B energized | 2026-06-30 → 2026-07-06 (+6d) | 2026-06-30 → 2026-07-06 (+6d) |  | 10d → 6d |
| S120 | Underground utilities |  |  | 18% → 36% | -5d → -10d |
| P300 | Switchgear fabrication and delivery |  |  | 23% → 27% |  |
| P310 | Transformer fabrication and delivery |  | 2026-04-16 → 2026-05-07 (+21d) | 19% → 13% | 0d → -15d |
| P320 | Generator fabrication and delivery |  |  | 3% → 6% |  |
| P330 | Chiller fabrication and delivery |  |  | 22% → 27% |  |
| P340 | UPS fabrication and delivery |  |  | 33% → 38% |  |
| E420 | Set and test main transformers | 2026-04-17 → 2026-05-08 (+21d) | 2026-05-06 → 2026-05-27 (+21d) |  | 0d → -15d |
| A440 | Building A medium-voltage feeders | 2026-05-07 → 2026-05-28 (+21d) | 2026-06-15 → 2026-07-06 (+21d) |  | 0d → -15d |
| A700 | Building A L2 installation checks | 2026-06-16 → 2026-07-07 (+21d) | 2026-07-03 → 2026-07-24 (+21d) |  | 10d → -5d |
| A710 | Building A L3 startup | 2026-07-06 → 2026-07-27 (+21d) | 2026-08-03 → 2026-08-24 (+21d) |  | 10d → -5d |
| A720 | Building A L4 functional testing | 2026-08-04 → 2026-08-25 (+21d) | 2026-09-01 → 2026-09-22 (+21d) |  | 10d → -5d |
| A730 | Building A L5 integrated systems test | 2026-09-02 → 2026-09-23 (+21d) | 2026-09-21 → 2026-10-12 (+21d) |  | 10d → -5d |
| B440 | Building B medium-voltage feeders | 2026-05-22 → 2026-05-28 (+6d) | 2026-06-30 → 2026-07-06 (+6d) |  | 10d → 6d |

## Version 10 (data date 2025-11-10, saved 2025-11-10, file week_10.xer)

Note of the change: Ship end-to-end Baseline with Streamlit dashboard and 3D campus viz.

Last finish stays 2026-10-26.

Changed:

| ID | Task | Start | Complete | Total float |
| --- | --- | --- | --- | --- |
| S120 | Underground utilities |  | 36% → 54% | -10d → -15d |
| P300 | Switchgear fabrication and delivery |  | 27% → 30% |  |
| P310 | Transformer fabrication and delivery |  | 13% → 16% |  |
| P320 | Generator fabrication and delivery |  | 6% → 9% |  |
| P330 | Chiller fabrication and delivery |  | 27% → 31% |  |
| P340 | UPS fabrication and delivery |  | 38% → 42% |  |
| A200 | Building A foundations | 2025-11-03 A | 0% → 14% |  |

## Version 11 (data date 2025-11-17, saved 2025-11-17, file week_11.xer)

Note of the change: Ship end-to-end Baseline with Streamlit dashboard and 3D campus viz.

Last finish stays 2026-10-26.

Changed:

| ID | Task | Complete | Total float |
| --- | --- | --- | --- |
| S120 | Underground utilities | 54% → 71% | -15d → -20d |
| P300 | Switchgear fabrication and delivery | 30% → 34% |  |
| P310 | Transformer fabrication and delivery | 16% → 19% |  |
| P320 | Generator fabrication and delivery | 9% → 12% |  |
| P330 | Chiller fabrication and delivery | 31% → 36% |  |
| P340 | UPS fabrication and delivery | 42% → 47% |  |
| A200 | Building A foundations | 14% → 29% |  |

## Version 12 (data date 2025-11-24, saved 2025-11-24, file week_12.xer)

Note of the change: Ship end-to-end Baseline with Streamlit dashboard and 3D campus viz.

Last finish 2026-10-26 → 2026-11-09 (+14d).

Changed:

| ID | Task | Start | Finish | Duration | Complete | Total float |
| --- | --- | --- | --- | --- | --- | --- |
| A800 | Building A energized | 2026-07-06 → 2026-08-03 (+28d) | 2026-07-06 → 2026-08-03 (+28d) |  |  | -15d → -35d |
| A900 | Building A ready for service | 2026-10-12 → 2026-11-09 (+28d) | 2026-10-12 → 2026-11-09 (+28d) |  |  | -5d → -25d |
| B800 | Building B energized | 2026-07-06 → 2026-08-03 (+28d) | 2026-07-06 → 2026-08-03 (+28d) |  |  | 6d → -14d |
| B900 | Building B ready for service | 2026-10-26 → 2026-11-09 (+14d) | 2026-10-26 → 2026-11-09 (+14d) |  |  |  |
| S120 | Underground utilities |  |  |  | 71% → 89% | -20d → -15d |
| P300 | Switchgear fabrication and delivery |  | 2026-03-23 → 2026-04-02 (+10d) | 138d → 146d | 34% → 36% | 11d → 3d |
| P310 | Transformer fabrication and delivery |  | 2026-05-07 → 2026-06-04 (+28d) | 154d → 174d | 19% → 20% | -15d → -35d |
| P320 | Generator fabrication and delivery |  | 2026-05-29 → 2026-06-19 (+21d) |  | 12% → 6% | 14d → -1d |
| P330 | Chiller fabrication and delivery |  |  |  | 36% → 40% |  |
| P340 | UPS fabrication and delivery |  |  |  | 47% → 52% |  |
| E420 | Set and test main transformers | 2026-05-08 → 2026-06-05 (+28d) | 2026-05-27 → 2026-06-24 (+28d) |  |  | -15d → -35d |
| E450 | Set and test generators | 2026-06-01 → 2026-06-22 (+21d) | 2026-06-29 → 2026-07-20 (+21d) |  |  | 14d → -1d |
| A200 | Building A foundations |  |  |  | 29% → 43% |  |
| A430 | Building A install switchgear | 2026-03-24 → 2026-04-03 (+10d) | 2026-04-21 → 2026-05-01 (+10d) |  |  | 11d → 3d |
| A440 | Building A medium-voltage feeders | 2026-05-28 → 2026-06-25 (+28d) | 2026-07-06 → 2026-08-03 (+28d) |  |  | -15d → -35d |
| A700 | Building A L2 installation checks | 2026-07-07 → 2026-08-04 (+28d) | 2026-07-24 → 2026-08-21 (+28d) |  |  | -5d → -25d |
| A710 | Building A L3 startup | 2026-07-27 → 2026-08-24 (+28d) | 2026-08-24 → 2026-09-21 (+28d) |  |  | -5d → -25d |
| A720 | Building A L4 functional testing | 2026-08-25 → 2026-09-22 (+28d) | 2026-09-22 → 2026-10-20 (+28d) |  |  | -5d → -25d |
| A730 | Building A L5 integrated systems test | 2026-09-23 → 2026-10-21 (+28d) | 2026-10-12 → 2026-11-09 (+28d) |  |  | -5d → -25d |
| B440 | Building B medium-voltage feeders | 2026-05-28 → 2026-06-25 (+28d) | 2026-07-06 → 2026-08-03 (+28d) |  |  | 6d → -14d |
| B700 | Building B L2 installation checks | 2026-07-21 → 2026-08-04 (+14d) | 2026-08-07 → 2026-08-21 (+14d) |  |  |  |
| B710 | Building B L3 startup | 2026-08-10 → 2026-08-24 (+14d) | 2026-09-07 → 2026-09-21 (+14d) |  |  |  |
| B720 | Building B L4 functional testing | 2026-09-08 → 2026-09-22 (+14d) | 2026-10-06 → 2026-10-20 (+14d) |  |  |  |
| B730 | Building B L5 integrated systems test | 2026-10-07 → 2026-10-21 (+14d) | 2026-10-26 → 2026-11-09 (+14d) |  |  |  |

## Version 13 (data date 2025-12-01, saved 2025-12-01, file week_13.xer)

Note of the change: Ship end-to-end Baseline with Streamlit dashboard and 3D campus viz.

Last finish 2026-11-09 → 2026-12-07 (+28d). Complete tasks 3 → 4.

Changed:

| ID | Task | Start | Finish | Complete | Total float |
| --- | --- | --- | --- | --- | --- |
| A800 | Building A energized | 2026-08-03 → 2026-08-31 (+28d) | 2026-08-03 → 2026-08-31 (+28d) |  | -35d → -55d |
| A900 | Building A ready for service | 2026-11-09 → 2026-12-07 (+28d) | 2026-11-09 → 2026-12-07 (+28d) |  | -25d → -45d |
| B800 | Building B energized | 2026-08-03 → 2026-08-31 (+28d) | 2026-08-03 → 2026-08-31 (+28d) |  | -14d → -34d |
| B900 | Building B ready for service | 2026-11-09 → 2026-12-07 (+28d) | 2026-11-09 → 2026-12-07 (+28d) |  | 0d → -20d |
| S120 | Underground utilities |  | 2025-11-26 A | 89% → 100% | -15d → none |
| P300 | Switchgear fabrication and delivery |  |  | 36% → 39% |  |
| P310 | Transformer fabrication and delivery |  | 2026-06-04 → 2026-07-02 (+28d) | 20% → 11% | -35d → -55d |
| P320 | Generator fabrication and delivery |  |  | 6% → 9% |  |
| P330 | Chiller fabrication and delivery |  |  | 40% → 45% |  |
| P340 | UPS fabrication and delivery |  |  | 52% → 57% |  |
| E400 | Substation civil and structure | 2025-11-27 A |  | 0% → 4% |  |
| E420 | Set and test main transformers | 2026-06-05 → 2026-07-03 (+28d) | 2026-06-24 → 2026-07-22 (+28d) |  | -35d → -55d |
| A200 | Building A foundations |  |  | 43% → 57% |  |
| A440 | Building A medium-voltage feeders | 2026-06-25 → 2026-07-23 (+28d) | 2026-08-03 → 2026-08-31 (+28d) |  | -35d → -55d |
| A700 | Building A L2 installation checks | 2026-08-04 → 2026-09-01 (+28d) | 2026-08-21 → 2026-09-18 (+28d) |  | -25d → -45d |
| A710 | Building A L3 startup | 2026-08-24 → 2026-09-21 (+28d) | 2026-09-21 → 2026-10-19 (+28d) |  | -25d → -45d |
| A720 | Building A L4 functional testing | 2026-09-22 → 2026-10-20 (+28d) | 2026-10-20 → 2026-11-17 (+28d) |  | -25d → -45d |
| A730 | Building A L5 integrated systems test | 2026-10-21 → 2026-11-18 (+28d) | 2026-11-09 → 2026-12-07 (+28d) |  | -25d → -45d |
| B440 | Building B medium-voltage feeders | 2026-06-25 → 2026-07-23 (+28d) | 2026-08-03 → 2026-08-31 (+28d) |  | -14d → -34d |
| B700 | Building B L2 installation checks | 2026-08-04 → 2026-09-01 (+28d) | 2026-08-21 → 2026-09-18 (+28d) |  | 0d → -20d |
| B710 | Building B L3 startup | 2026-08-24 → 2026-09-21 (+28d) | 2026-09-21 → 2026-10-19 (+28d) |  | 0d → -20d |
| B720 | Building B L4 functional testing | 2026-09-22 → 2026-10-20 (+28d) | 2026-10-20 → 2026-11-17 (+28d) |  | 0d → -20d |
| B730 | Building B L5 integrated systems test | 2026-10-21 → 2026-11-18 (+28d) | 2026-11-09 → 2026-12-07 (+28d) |  | 0d → -20d |

## Version 14 (data date 2025-12-08, saved 2025-12-08, file week_14.xer)

Note of the change: Ship end-to-end Baseline with Streamlit dashboard and 3D campus viz.

Last finish 2026-12-07 → 2027-01-04 (+28d).

Changed:

| ID | Task | Start | Finish | Duration | Complete | Total float |
| --- | --- | --- | --- | --- | --- | --- |
| A800 | Building A energized | 2026-08-31 → 2026-09-28 (+28d) | 2026-08-31 → 2026-09-28 (+28d) |  |  | -55d → -75d |
| A900 | Building A ready for service | 2026-12-07 → 2027-01-04 (+28d) | 2026-12-07 → 2027-01-04 (+28d) |  |  | -45d → -65d |
| B800 | Building B energized | 2026-08-31 → 2026-09-28 (+28d) | 2026-08-31 → 2026-09-28 (+28d) |  |  | -34d → -54d |
| B900 | Building B ready for service | 2026-12-07 → 2027-01-04 (+28d) | 2026-12-07 → 2027-01-04 (+28d) |  |  | -20d → -40d |
| P300 | Switchgear fabrication and delivery |  |  |  | 39% → 42% |  |
| P310 | Transformer fabrication and delivery |  | 2026-07-02 → 2026-07-30 (+28d) | 174d → 194d | 11% → 13% | -55d → -75d |
| P320 | Generator fabrication and delivery |  |  |  | 9% → 12% |  |
| P330 | Chiller fabrication and delivery |  |  |  | 45% → 49% |  |
| P340 | UPS fabrication and delivery |  |  |  | 57% → 61% |  |
| E400 | Substation civil and structure |  |  |  | 4% → 12% |  |
| E420 | Set and test main transformers | 2026-07-03 → 2026-07-31 (+28d) | 2026-07-22 → 2026-08-19 (+28d) |  |  | -55d → -75d |
| A200 | Building A foundations |  | 2025-12-19 → 2025-12-24 (+5d) |  | 57% → 63% | 10d → 7d |
| A210 | Building A steel erection | 2025-12-22 → 2025-12-25 (+3d) | 2026-02-17 → 2026-02-20 (+3d) |  |  | 10d → 7d |
| A220 | Building A roofing | 2026-02-18 → 2026-02-23 (+5d) | 2026-03-18 → 2026-03-23 (+5d) |  |  | 10d → 7d |
| A230 | Building A envelope and façade | 2026-01-05 → 2026-01-08 (+3d) | 2026-02-20 → 2026-02-25 (+5d) |  |  | 28d → 25d |
| A440 | Building A medium-voltage feeders | 2026-07-23 → 2026-08-20 (+28d) | 2026-08-31 → 2026-09-28 (+28d) |  |  | -55d → -75d |
| A500 | Building A install chillers | 2026-03-19 → 2026-03-24 (+5d) | 2026-04-27 → 2026-04-30 (+3d) |  |  | 10d → 7d |
| A510 | Building A CRAH units | 2026-02-23 → 2026-02-26 (+3d) | 2026-03-23 → 2026-03-26 (+3d) |  |  | 70d → 67d |
| A520 | Building A chilled water piping | 2026-04-28 → 2026-05-01 (+3d) | 2026-06-15 → 2026-06-18 (+3d) |  |  | 10d → 7d |
| A600 | Building A raised floor and containment | 2026-02-23 → 2026-02-26 (+3d) | 2026-04-01 → 2026-04-06 (+5d) |  |  | 28d → 25d |
| A610 | Building A cable tray | 2026-04-02 → 2026-04-07 (+5d) | 2026-04-30 → 2026-05-05 (+5d) |  |  | 28d → 25d |
| A620 | Building A UPS installation | 2026-05-01 → 2026-05-06 (+5d) | 2026-05-20 → 2026-05-25 (+5d) |  |  | 28d → 25d |
| A700 | Building A L2 installation checks | 2026-09-01 → 2026-09-29 (+28d) | 2026-09-18 → 2026-10-16 (+28d) |  |  | -45d → -65d |
| A710 | Building A L3 startup | 2026-09-21 → 2026-10-19 (+28d) | 2026-10-19 → 2026-11-16 (+28d) |  |  | -45d → -65d |
| A720 | Building A L4 functional testing | 2026-10-20 → 2026-11-17 (+28d) | 2026-11-17 → 2026-12-15 (+28d) |  |  | -45d → -65d |
| A730 | Building A L5 integrated systems test | 2026-11-18 → 2026-12-16 (+28d) | 2026-12-07 → 2027-01-04 (+28d) |  |  | -45d → -65d |
| B440 | Building B medium-voltage feeders | 2026-07-23 → 2026-08-20 (+28d) | 2026-08-31 → 2026-09-28 (+28d) |  |  | -34d → -54d |
| B700 | Building B L2 installation checks | 2026-09-01 → 2026-09-29 (+28d) | 2026-09-18 → 2026-10-16 (+28d) |  |  | -20d → -40d |
| B710 | Building B L3 startup | 2026-09-21 → 2026-10-19 (+28d) | 2026-10-19 → 2026-11-16 (+28d) |  |  | -20d → -40d |
| B720 | Building B L4 functional testing | 2026-10-20 → 2026-11-17 (+28d) | 2026-11-17 → 2026-12-15 (+28d) |  |  | -20d → -40d |
| B730 | Building B L5 integrated systems test | 2026-11-18 → 2026-12-16 (+28d) | 2026-12-07 → 2027-01-04 (+28d) |  |  | -20d → -40d |

## Version 15 (data date 2025-12-15, saved 2025-12-15, file week_15.xer)

Note of the change: Ship end-to-end Baseline with Streamlit dashboard and 3D campus viz.

Last finish stays 2027-01-04.

Changed:

| ID | Task | Start | Complete |
| --- | --- | --- | --- |
| P300 | Switchgear fabrication and delivery |  | 42% → 46% |
| P310 | Transformer fabrication and delivery |  | 13% → 15% |
| P320 | Generator fabrication and delivery |  | 12% → 16% |
| P330 | Chiller fabrication and delivery |  | 49% → 54% |
| P340 | UPS fabrication and delivery |  | 61% → 66% |
| E400 | Substation civil and structure |  | 12% → 21% |
| A200 | Building A foundations |  | 63% → 77% |
| B200 | Building B foundations | 2025-12-08 A | 0% → 14% |

## Version 16 (data date 2025-12-22, saved 2025-12-22, file week_16.xer)

Note of the change: Ship end-to-end Baseline with Streamlit dashboard and 3D campus viz.

Last finish 2027-01-04 → 2027-01-18 (+14d).

Changed:

| ID | Task | Start | Finish | Complete | Total float |
| --- | --- | --- | --- | --- | --- |
| A800 | Building A energized | 2026-09-28 → 2026-10-12 (+14d) | 2026-09-28 → 2026-10-12 (+14d) |  | -75d → -85d |
| A900 | Building A ready for service | 2027-01-04 → 2027-01-18 (+14d) | 2027-01-04 → 2027-01-18 (+14d) |  | -65d → -75d |
| B800 | Building B energized | 2026-09-28 → 2026-10-12 (+14d) | 2026-09-28 → 2026-10-12 (+14d) |  | -54d → -64d |
| B900 | Building B ready for service | 2027-01-04 → 2027-01-18 (+14d) | 2027-01-04 → 2027-01-18 (+14d) |  | -40d → -50d |
| P300 | Switchgear fabrication and delivery |  |  | 46% → 49% |  |
| P310 | Transformer fabrication and delivery |  | 2026-07-30 → 2026-08-13 (+14d) | 15% → 13% | -75d → -85d |
| P320 | Generator fabrication and delivery |  |  | 16% → 19% |  |
| P330 | Chiller fabrication and delivery |  |  | 54% → 58% |  |
| P340 | UPS fabrication and delivery |  | 2026-02-02 → 2026-03-02 (+28d) | 66% → 52% | 91d → 71d |
| E400 | Substation civil and structure |  |  | 21% → 30% |  |
| E420 | Set and test main transformers | 2026-07-31 → 2026-08-14 (+14d) | 2026-08-19 → 2026-09-02 (+14d) |  | -75d → -85d |
| A200 | Building A foundations |  |  | 77% → 91% |  |
| A440 | Building A medium-voltage feeders | 2026-08-20 → 2026-09-03 (+14d) | 2026-09-28 → 2026-10-12 (+14d) |  | -75d → -85d |
| A700 | Building A L2 installation checks | 2026-09-29 → 2026-10-13 (+14d) | 2026-10-16 → 2026-10-30 (+14d) |  | -65d → -75d |
| A710 | Building A L3 startup | 2026-10-19 → 2026-11-02 (+14d) | 2026-11-16 → 2026-11-30 (+14d) |  | -65d → -75d |
| A720 | Building A L4 functional testing | 2026-11-17 → 2026-12-01 (+14d) | 2026-12-15 → 2026-12-29 (+14d) |  | -65d → -75d |
| A730 | Building A L5 integrated systems test | 2026-12-16 → 2026-12-30 (+14d) | 2027-01-04 → 2027-01-18 (+14d) |  | -65d → -75d |
| B200 | Building B foundations |  |  | 14% → 29% |  |
| B440 | Building B medium-voltage feeders | 2026-08-20 → 2026-09-03 (+14d) | 2026-09-28 → 2026-10-12 (+14d) |  | -54d → -64d |
| B700 | Building B L2 installation checks | 2026-09-29 → 2026-10-13 (+14d) | 2026-10-16 → 2026-10-30 (+14d) |  | -40d → -50d |
| B710 | Building B L3 startup | 2026-10-19 → 2026-11-02 (+14d) | 2026-11-16 → 2026-11-30 (+14d) |  | -40d → -50d |
| B720 | Building B L4 functional testing | 2026-11-17 → 2026-12-01 (+14d) | 2026-12-15 → 2026-12-29 (+14d) |  | -40d → -50d |
| B730 | Building B L5 integrated systems test | 2026-12-16 → 2026-12-30 (+14d) | 2027-01-04 → 2027-01-18 (+14d) |  | -40d → -50d |

## Version 17 (data date 2025-12-29, saved 2025-12-29, file week_17.xer)

Note of the change: Ship end-to-end Baseline with Streamlit dashboard and 3D campus viz.

Last finish stays 2027-01-18. Complete tasks 4 → 5.

Changed:

| ID | Task | Start | Finish | Complete | Total float |
| --- | --- | --- | --- | --- | --- |
| P300 | Switchgear fabrication and delivery |  | 2026-04-02 → 2026-04-16 (+14d) | 49% → 46% | 3d → -7d |
| P310 | Transformer fabrication and delivery |  |  | 13% → 15% |  |
| P320 | Generator fabrication and delivery |  |  | 19% → 22% |  |
| P330 | Chiller fabrication and delivery |  |  | 58% → 62% |  |
| P340 | UPS fabrication and delivery |  |  | 52% → 57% |  |
| E400 | Substation civil and structure |  |  | 30% → 39% |  |
| A200 | Building A foundations |  | 2025-12-24 A | 91% → 100% | 7d → none |
| A210 | Building A steel erection | 2025-12-25 A |  | 0% → 5% |  |
| A430 | Building A install switchgear | 2026-04-03 → 2026-04-17 (+14d) | 2026-05-01 → 2026-05-15 (+14d) |  | 3d → -7d |
| B200 | Building B foundations |  |  | 29% → 43% |  |

## Version 18 (data date 2026-01-05, saved 2026-01-05, file week_18.xer)

Note of the change: Ship end-to-end Baseline with Streamlit dashboard and 3D campus viz.

Last finish 2027-01-18 → 2027-02-08 (+21d).

Changed:

| ID | Task | Start | Finish | Complete | Total float |
| --- | --- | --- | --- | --- | --- |
| A800 | Building A energized | 2026-10-12 → 2026-11-02 (+21d) | 2026-10-12 → 2026-11-02 (+21d) |  | -85d → -100d |
| A900 | Building A ready for service | 2027-01-18 → 2027-02-08 (+21d) | 2027-01-18 → 2027-02-08 (+21d) |  | -75d → -90d |
| B800 | Building B energized | 2026-10-12 → 2026-11-02 (+21d) | 2026-10-12 → 2026-11-02 (+21d) |  | -64d → -79d |
| B900 | Building B ready for service | 2027-01-18 → 2027-02-08 (+21d) | 2027-01-18 → 2027-02-08 (+21d) |  | -50d → -65d |
| P300 | Switchgear fabrication and delivery |  | 2026-04-16 → 2026-04-28 (+12d) | 46% → 44% | -7d → -15d |
| P310 | Transformer fabrication and delivery |  | 2026-08-13 → 2026-09-03 (+21d) | 15% → 10% | -85d → -100d |
| P320 | Generator fabrication and delivery |  |  | 22% → 25% |  |
| P330 | Chiller fabrication and delivery |  |  | 62% → 67% |  |
| P340 | UPS fabrication and delivery |  |  | 57% → 61% |  |
| E400 | Substation civil and structure |  |  | 39% → 48% |  |
| E420 | Set and test main transformers | 2026-08-14 → 2026-09-04 (+21d) | 2026-09-02 → 2026-09-23 (+21d) |  | -85d → -100d |
| A210 | Building A steel erection |  |  | 5% → 17% |  |
| A430 | Building A install switchgear | 2026-04-17 → 2026-04-29 (+12d) | 2026-05-15 → 2026-05-27 (+12d) |  | -7d → -15d |
| A440 | Building A medium-voltage feeders | 2026-09-03 → 2026-09-24 (+21d) | 2026-10-12 → 2026-11-02 (+21d) |  | -85d → -100d |
| A700 | Building A L2 installation checks | 2026-10-13 → 2026-11-03 (+21d) | 2026-10-30 → 2026-11-20 (+21d) |  | -75d → -90d |
| A710 | Building A L3 startup | 2026-11-02 → 2026-11-23 (+21d) | 2026-11-30 → 2026-12-21 (+21d) |  | -75d → -90d |
| A720 | Building A L4 functional testing | 2026-12-01 → 2026-12-22 (+21d) | 2026-12-29 → 2027-01-19 (+21d) |  | -75d → -90d |
| A730 | Building A L5 integrated systems test | 2026-12-30 → 2027-01-20 (+21d) | 2027-01-18 → 2027-02-08 (+21d) |  | -75d → -90d |
| B200 | Building B foundations |  |  | 43% → 57% |  |
| B430 | Building B install switchgear | 2026-04-23 → 2026-04-29 (+6d) | 2026-05-21 → 2026-05-27 (+6d) |  | 10d → 6d |
| B440 | Building B medium-voltage feeders | 2026-09-03 → 2026-09-24 (+21d) | 2026-10-12 → 2026-11-02 (+21d) |  | -64d → -79d |
| B700 | Building B L2 installation checks | 2026-10-13 → 2026-11-03 (+21d) | 2026-10-30 → 2026-11-20 (+21d) |  | -50d → -65d |
| B710 | Building B L3 startup | 2026-11-02 → 2026-11-23 (+21d) | 2026-11-30 → 2026-12-21 (+21d) |  | -50d → -65d |
| B720 | Building B L4 functional testing | 2026-12-01 → 2026-12-22 (+21d) | 2026-12-29 → 2027-01-19 (+21d) |  | -50d → -65d |
| B730 | Building B L5 integrated systems test | 2026-12-30 → 2027-01-20 (+21d) | 2027-01-18 → 2027-02-08 (+21d) |  | -50d → -65d |

## Version 19 (data date 2026-01-12, saved 2026-01-12, file week_19.xer)

Note of the change: Ship end-to-end Baseline with Streamlit dashboard and 3D campus viz.

Last finish stays 2027-02-08.

Changed:

| ID | Task | Start | Finish | Duration | Complete | Total float |
| --- | --- | --- | --- | --- | --- | --- |
| P300 | Switchgear fabrication and delivery |  |  |  | 44% → 47% |  |
| P310 | Transformer fabrication and delivery |  |  |  | 10% → 13% |  |
| P320 | Generator fabrication and delivery |  |  |  | 25% → 28% |  |
| P330 | Chiller fabrication and delivery |  |  |  | 67% → 71% |  |
| P340 | UPS fabrication and delivery |  | 2026-03-02 → 2026-03-09 (+7d) | 106d → 111d | 61% → 63% | 71d → 66d |
| E400 | Substation civil and structure |  |  |  | 48% → 57% |  |
| A210 | Building A steel erection |  |  |  | 17% → 29% |  |
| A230 | Building A envelope and façade | 2026-01-08 A |  |  | 0% → 6% |  |
| B200 | Building B foundations |  |  |  | 57% → 71% |  |

## Version 20 (data date 2026-01-19, saved 2026-01-19, file week_20.xer)

Note of the change: Ship end-to-end Baseline with Streamlit dashboard and 3D campus viz.

Last finish stays 2027-02-08.

Changed:

| ID | Task | Start | Finish | Complete | Total float |
| --- | --- | --- | --- | --- | --- |
| P300 | Switchgear fabrication and delivery |  | 2026-04-28 → 2026-05-12 (+14d) | 47% → 44% | -15d → -25d |
| P310 | Transformer fabrication and delivery |  |  | 13% → 15% |  |
| P320 | Generator fabrication and delivery |  | 2026-06-19 → 2026-07-10 (+21d) | 28% → 22% | -1d → -16d |
| P330 | Chiller fabrication and delivery |  |  | 71% → 76% |  |
| P340 | UPS fabrication and delivery |  |  | 63% → 68% |  |
| E400 | Substation civil and structure |  |  | 57% → 66% |  |
| E450 | Set and test generators | 2026-06-22 → 2026-07-13 (+21d) | 2026-07-20 → 2026-08-10 (+21d) |  | -1d → -16d |
| A210 | Building A steel erection |  |  | 29% → 40% |  |
| A230 | Building A envelope and façade |  |  | 6% → 20% |  |
| A430 | Building A install switchgear | 2026-04-29 → 2026-05-13 (+14d) | 2026-05-27 → 2026-06-10 (+14d) |  | -15d → -25d |
| B200 | Building B foundations |  |  | 71% → 86% |  |
| B430 | Building B install switchgear | 2026-04-29 → 2026-05-13 (+14d) | 2026-05-27 → 2026-06-10 (+14d) |  | 6d → -4d |

## Version 21 (data date 2026-01-26, saved 2026-01-26, file week_21.xer)

Note of the change: Ship end-to-end Baseline with Streamlit dashboard and 3D campus viz.

Last finish stays 2027-02-08. Complete tasks 5 → 6.

Changed:

| ID | Task | Finish | Complete | Total float |
| --- | --- | --- | --- | --- |
| P300 | Switchgear fabrication and delivery |  | 44% → 47% |  |
| P310 | Transformer fabrication and delivery |  | 15% → 18% |  |
| P320 | Generator fabrication and delivery |  | 22% → 25% |  |
| P330 | Chiller fabrication and delivery |  | 76% → 80% |  |
| P340 | UPS fabrication and delivery |  | 68% → 72% |  |
| E400 | Substation civil and structure |  | 66% → 75% |  |
| A210 | Building A steel erection |  | 40% → 52% |  |
| A230 | Building A envelope and façade |  | 20% → 34% |  |
| B200 | Building B foundations | 2026-01-23 A | 86% → 100% | 10d → none |

## Version 22 (data date 2026-02-02, saved 2026-02-02, file week_22.xer)

Note of the change: Ship end-to-end Baseline with Streamlit dashboard and 3D campus viz.

Last finish 2027-02-08 → 2027-03-08 (+28d).

Changed:

| ID | Task | Start | Finish | Duration | Complete | Total float |
| --- | --- | --- | --- | --- | --- | --- |
| A800 | Building A energized | 2026-11-02 → 2026-11-30 (+28d) | 2026-11-02 → 2026-11-30 (+28d) |  |  | -100d → -120d |
| A900 | Building A ready for service | 2027-02-08 → 2027-03-08 (+28d) | 2027-02-08 → 2027-03-08 (+28d) |  |  | -90d → -110d |
| B800 | Building B energized | 2026-11-02 → 2026-11-30 (+28d) | 2026-11-02 → 2026-11-30 (+28d) |  |  | -79d → -99d |
| B900 | Building B ready for service | 2027-02-08 → 2027-03-08 (+28d) | 2027-02-08 → 2027-03-08 (+28d) |  |  | -65d → -85d |
| P300 | Switchgear fabrication and delivery |  | 2026-05-12 → 2026-06-09 (+28d) |  | 47% → 37% | -25d → -45d |
| P310 | Transformer fabrication and delivery |  | 2026-09-03 → 2026-10-01 (+28d) | 194d → 214d | 18% → 19% | -100d → -120d |
| P320 | Generator fabrication and delivery |  |  |  | 25% → 28% |  |
| P330 | Chiller fabrication and delivery |  |  |  | 80% → 85% |  |
| P340 | UPS fabrication and delivery |  |  |  | 72% → 77% |  |
| E400 | Substation civil and structure |  |  |  | 75% → 84% |  |
| E420 | Set and test main transformers | 2026-09-04 → 2026-10-02 (+28d) | 2026-09-23 → 2026-10-21 (+28d) |  |  | -100d → -120d |
| A210 | Building A steel erection |  |  |  | 52% → 64% |  |
| A230 | Building A envelope and façade |  |  |  | 34% → 49% |  |
| A430 | Building A install switchgear | 2026-05-13 → 2026-06-10 (+28d) | 2026-06-10 → 2026-07-08 (+28d) |  |  | -25d → -45d |
| A440 | Building A medium-voltage feeders | 2026-09-24 → 2026-10-22 (+28d) | 2026-11-02 → 2026-11-30 (+28d) |  |  | -100d → -120d |
| A700 | Building A L2 installation checks | 2026-11-03 → 2026-12-01 (+28d) | 2026-11-20 → 2026-12-18 (+28d) |  |  | -90d → -110d |
| A710 | Building A L3 startup | 2026-11-23 → 2026-12-21 (+28d) | 2026-12-21 → 2027-01-18 (+28d) |  |  | -90d → -110d |
| A720 | Building A L4 functional testing | 2026-12-22 → 2027-01-19 (+28d) | 2027-01-19 → 2027-02-16 (+28d) |  |  | -90d → -110d |
| A730 | Building A L5 integrated systems test | 2027-01-20 → 2027-02-17 (+28d) | 2027-02-08 → 2027-03-08 (+28d) |  |  | -90d → -110d |
| B210 | Building B steel erection | 2026-01-26 A |  |  | 0% → 12% |  |
| B430 | Building B install switchgear | 2026-05-13 → 2026-06-10 (+28d) | 2026-06-10 → 2026-07-08 (+28d) |  |  | -4d → -24d |
| B440 | Building B medium-voltage feeders | 2026-09-24 → 2026-10-22 (+28d) | 2026-11-02 → 2026-11-30 (+28d) |  |  | -79d → -99d |
| B700 | Building B L2 installation checks | 2026-11-03 → 2026-12-01 (+28d) | 2026-11-20 → 2026-12-18 (+28d) |  |  | -65d → -85d |
| B710 | Building B L3 startup | 2026-11-23 → 2026-12-21 (+28d) | 2026-12-21 → 2027-01-18 (+28d) |  |  | -65d → -85d |
| B720 | Building B L4 functional testing | 2026-12-22 → 2027-01-19 (+28d) | 2027-01-19 → 2027-02-16 (+28d) |  |  | -65d → -85d |
| B730 | Building B L5 integrated systems test | 2027-01-20 → 2027-02-17 (+28d) | 2027-02-08 → 2027-03-08 (+28d) |  |  | -65d → -85d |

## Version 23 (data date 2026-02-09, saved 2026-02-09, file week_23.xer)

Note of the change: Ship end-to-end Baseline with Streamlit dashboard and 3D campus viz.

Last finish 2027-03-08 → 2027-03-18 (+10d).

Changed:

| ID | Task | Start | Finish | Duration | Complete | Total float |
| --- | --- | --- | --- | --- | --- | --- |
| A800 | Building A energized | 2026-11-30 → 2026-12-10 (+10d) | 2026-11-30 → 2026-12-10 (+10d) |  |  | -120d → -128d |
| A900 | Building A ready for service | 2027-03-08 → 2027-03-18 (+10d) | 2027-03-08 → 2027-03-18 (+10d) |  |  | -110d → -118d |
| B800 | Building B energized | 2026-11-30 → 2026-12-10 (+10d) | 2026-11-30 → 2026-12-10 (+10d) |  |  | -99d → -107d |
| B900 | Building B ready for service | 2027-03-08 → 2027-03-18 (+10d) | 2027-03-08 → 2027-03-18 (+10d) |  |  | -85d → -93d |
| P300 | Switchgear fabrication and delivery |  |  |  | 37% → 40% |  |
| P310 | Transformer fabrication and delivery |  | 2026-10-01 → 2026-10-13 (+12d) | 214d → 222d | 19% → 20% | -120d → -128d |
| P320 | Generator fabrication and delivery |  |  |  | 28% → 31% |  |
| P330 | Chiller fabrication and delivery |  |  |  | 85% → 89% |  |
| P340 | UPS fabrication and delivery |  |  |  | 77% → 81% |  |
| E400 | Substation civil and structure |  |  |  | 84% → 93% |  |
| E420 | Set and test main transformers | 2026-10-02 → 2026-10-14 (+12d) | 2026-10-21 → 2026-11-02 (+12d) |  |  | -120d → -128d |
| A210 | Building A steel erection |  | 2026-02-20 → 2026-03-04 (+12d) |  | 64% → 57% | 7d → -1d |
| A220 | Building A roofing | 2026-02-23 → 2026-03-05 (+10d) | 2026-03-23 → 2026-04-02 (+10d) |  |  | 7d → -1d |
| A230 | Building A envelope and façade |  |  |  | 49% → 63% |  |
| A440 | Building A medium-voltage feeders | 2026-10-22 → 2026-11-03 (+12d) | 2026-11-30 → 2026-12-10 (+10d) |  |  | -120d → -128d |
| A500 | Building A install chillers | 2026-03-24 → 2026-04-03 (+10d) | 2026-04-30 → 2026-05-12 (+12d) |  |  | 7d → -1d |
| A520 | Building A chilled water piping | 2026-05-01 → 2026-05-13 (+12d) | 2026-06-18 → 2026-06-30 (+12d) |  |  | 7d → -1d |
| A700 | Building A L2 installation checks | 2026-12-01 → 2026-12-11 (+10d) | 2026-12-18 → 2026-12-30 (+12d) |  |  | -110d → -118d |
| A710 | Building A L3 startup | 2026-12-21 → 2026-12-31 (+10d) | 2027-01-18 → 2027-01-28 (+10d) |  |  | -110d → -118d |
| A720 | Building A L4 functional testing | 2027-01-19 → 2027-01-29 (+10d) | 2027-02-16 → 2027-02-26 (+10d) |  |  | -110d → -118d |
| A730 | Building A L5 integrated systems test | 2027-02-17 → 2027-03-01 (+12d) | 2027-03-08 → 2027-03-18 (+10d) |  |  | -110d → -118d |
| B210 | Building B steel erection |  |  |  | 12% → 24% |  |
| B440 | Building B medium-voltage feeders | 2026-10-22 → 2026-11-03 (+12d) | 2026-11-30 → 2026-12-10 (+10d) |  |  | -99d → -107d |
| B700 | Building B L2 installation checks | 2026-12-01 → 2026-12-11 (+10d) | 2026-12-18 → 2026-12-30 (+12d) |  |  | -85d → -93d |
| B710 | Building B L3 startup | 2026-12-21 → 2026-12-31 (+10d) | 2027-01-18 → 2027-01-28 (+10d) |  |  | -85d → -93d |
| B720 | Building B L4 functional testing | 2027-01-19 → 2027-01-29 (+10d) | 2027-02-16 → 2027-02-26 (+10d) |  |  | -85d → -93d |
| B730 | Building B L5 integrated systems test | 2027-02-17 → 2027-03-01 (+12d) | 2027-03-08 → 2027-03-18 (+10d) |  |  | -85d → -93d |

## Version 24 (data date 2026-02-16, saved 2026-02-16, file week_24.xer)

Note of the change: Ship end-to-end Baseline with Streamlit dashboard and 3D campus viz.

Last finish stays 2027-03-18. Complete tasks 6 → 7.

Changed:

| ID | Task | Start | Finish | Complete | Total float |
| --- | --- | --- | --- | --- | --- |
| P300 | Switchgear fabrication and delivery |  |  | 40% → 44% |  |
| P310 | Transformer fabrication and delivery |  |  | 20% → 23% |  |
| P320 | Generator fabrication and delivery |  |  | 31% → 34% |  |
| P330 | Chiller fabrication and delivery |  |  | 89% → 94% |  |
| P340 | UPS fabrication and delivery |  |  | 81% → 86% |  |
| E400 | Substation civil and structure |  | 2026-02-12 A | 93% → 100% | 45d → none |
| E410 | Utility interconnect | 2026-02-13 A |  | 0% → 2% |  |
| A210 | Building A steel erection |  |  | 57% → 69% |  |
| A230 | Building A envelope and façade |  |  | 63% → 77% |  |
| B210 | Building B steel erection |  |  | 24% → 36% |  |
| B230 | Building B envelope and façade | 2026-02-09 A |  | 0% → 14% |  |

## Version 25 (data date 2026-02-23, saved 2026-02-23, file week_25.xer)

Note of the change: Ship end-to-end Baseline with Streamlit dashboard and 3D campus viz.

Last finish stays 2027-03-18.

Changed:

| ID | Task | Start | Finish | Duration | Complete | Total float |
| --- | --- | --- | --- | --- | --- | --- |
| P300 | Switchgear fabrication and delivery |  | 2026-06-09 → 2026-07-07 (+28d) |  | 44% → 34% | -45d → -65d |
| P310 | Transformer fabrication and delivery |  |  |  | 23% → 25% |  |
| P320 | Generator fabrication and delivery |  |  |  | 34% → 38% |  |
| P330 | Chiller fabrication and delivery |  |  |  | 94% → 98% |  |
| P340 | UPS fabrication and delivery |  |  |  | 86% → 90% |  |
| E410 | Utility interconnect |  | 2026-04-13 → 2026-04-23 (+10d) | 42d → 50d | 2% → 12% | 45d → 37d |
| A210 | Building A steel erection |  |  |  | 69% → 81% |  |
| A230 | Building A envelope and façade |  |  |  | 77% → 91% |  |
| A430 | Building A install switchgear | 2026-06-10 → 2026-07-08 (+28d) | 2026-07-08 → 2026-08-05 (+28d) |  |  | -45d → -65d |
| B210 | Building B steel erection |  |  |  | 36% → 48% |  |
| B230 | Building B envelope and façade |  |  |  | 14% → 29% |  |
| B430 | Building B install switchgear | 2026-06-10 → 2026-07-08 (+28d) | 2026-07-08 → 2026-08-05 (+28d) |  |  | -24d → -44d |

## Version 26 (data date 2026-03-02, saved 2026-03-02, file week_26.xer)

Note of the change: Ship end-to-end Baseline with Streamlit dashboard and 3D campus viz.

Last finish stays 2027-03-18. Complete tasks 7 → 9.

Changed:

| ID | Task | Start | Finish | Complete | Total float |
| --- | --- | --- | --- | --- | --- |
| P300 | Switchgear fabrication and delivery |  |  | 34% → 37% |  |
| P310 | Transformer fabrication and delivery |  |  | 25% → 27% |  |
| P320 | Generator fabrication and delivery |  |  | 38% → 41% |  |
| P330 | Chiller fabrication and delivery |  | 2026-02-24 A | 98% → 100% | 26d → none |
| P340 | UPS fabrication and delivery |  |  | 90% → 95% |  |
| E410 | Utility interconnect |  |  | 12% → 22% |  |
| A210 | Building A steel erection |  |  | 81% → 93% |  |
| A230 | Building A envelope and façade |  | 2026-02-25 A | 91% → 100% | 25d → none |
| A510 | Building A CRAH units | 2026-02-26 A |  | 0% → 10% |  |
| A600 | Building A raised floor and containment | 2026-02-26 A |  | 0% → 7% |  |
| B210 | Building B steel erection |  |  | 48% → 60% |  |
| B230 | Building B envelope and façade |  |  | 29% → 43% |  |

## Version 27 (data date 2026-03-09, saved 2026-03-09, file week_27.xer)

Note of the change: Ship end-to-end Baseline with Streamlit dashboard and 3D campus viz.

Last finish stays 2027-03-18. Complete tasks 9 → 10.

Changed:

| ID | Task | Start | Finish | Complete | Total float |
| --- | --- | --- | --- | --- | --- |
| P300 | Switchgear fabrication and delivery |  |  | 37% → 40% |  |
| P310 | Transformer fabrication and delivery |  |  | 27% → 29% |  |
| P320 | Generator fabrication and delivery |  |  | 41% → 44% |  |
| P340 | UPS fabrication and delivery |  |  | 95% → 99% |  |
| E410 | Utility interconnect |  |  | 22% → 32% |  |
| A210 | Building A steel erection |  | 2026-03-04 A | 93% → 100% | -1d → none |
| A220 | Building A roofing | 2026-03-05 A |  | 0% → 10% |  |
| A510 | Building A CRAH units |  |  | 10% → 33% |  |
| A600 | Building A raised floor and containment |  |  | 7% → 25% |  |
| B210 | Building B steel erection |  | 2026-03-24 → 2026-03-27 (+3d) | 60% → 64% | 10d → 7d |
| B220 | Building B roofing | 2026-03-25 → 2026-03-30 (+5d) | 2026-04-22 → 2026-04-27 (+5d) |  | 10d → 7d |
| B230 | Building B envelope and façade |  |  | 43% → 57% |  |
| B500 | Building B install chillers | 2026-04-23 → 2026-04-28 (+5d) | 2026-06-01 → 2026-06-04 (+3d) |  | 10d → 7d |
| B520 | Building B chilled water piping | 2026-06-02 → 2026-06-05 (+3d) | 2026-07-20 → 2026-07-23 (+3d) |  | 10d → 7d |

## Version 28 (data date 2026-03-16, saved 2026-03-16, file week_28.xer)

Note of the change: Ship end-to-end Baseline with Streamlit dashboard and 3D campus viz.

Last finish stays 2027-03-18. Complete tasks 10 → 11.

Changed:

| ID | Task | Start | Finish | Duration | Complete | Total float |
| --- | --- | --- | --- | --- | --- | --- |
| P300 | Switchgear fabrication and delivery |  |  |  | 40% → 44% |  |
| P310 | Transformer fabrication and delivery |  |  |  | 29% → 32% |  |
| P320 | Generator fabrication and delivery |  | 2026-07-10 → 2026-07-24 (+14d) | 160d → 170d |  | -16d → -26d |
| P340 | UPS fabrication and delivery |  | 2026-03-09 A |  | 99% → 100% | 66d → none |
| E410 | Utility interconnect |  |  |  | 32% → 42% |  |
| E450 | Set and test generators | 2026-07-13 → 2026-07-27 (+14d) | 2026-08-10 → 2026-08-24 (+14d) |  |  | -16d → -26d |
| A220 | Building A roofing |  |  |  | 10% → 33% |  |
| A510 | Building A CRAH units |  |  |  | 33% → 57% |  |
| A600 | Building A raised floor and containment |  |  |  | 25% → 43% |  |
| B210 | Building B steel erection |  |  |  | 64% → 76% |  |
| B230 | Building B envelope and façade |  |  |  | 57% → 71% |  |

## Version 29 (data date 2026-03-23, saved 2026-03-23, file week_29.xer)

Note of the change: Ship end-to-end Baseline with Streamlit dashboard and 3D campus viz.

Last finish stays 2027-03-18.

Changed:

| ID | Task | Start | Finish | Complete | Total float |
| --- | --- | --- | --- | --- | --- |
| P300 | Switchgear fabrication and delivery |  | 2026-07-07 → 2026-07-28 (+21d) | 44% → 37% | -65d → -80d |
| P310 | Transformer fabrication and delivery |  |  | 32% → 34% |  |
| P320 | Generator fabrication and delivery |  |  | 44% → 47% |  |
| E410 | Utility interconnect |  |  | 42% → 52% |  |
| A220 | Building A roofing |  |  | 33% → 57% |  |
| A430 | Building A install switchgear | 2026-07-08 → 2026-07-29 (+21d) | 2026-08-05 → 2026-08-26 (+21d) |  | -65d → -80d |
| A510 | Building A CRAH units |  | 2026-03-26 → 2026-04-07 (+12d) | 57% → 43% | 67d → 59d |
| A600 | Building A raised floor and containment |  | 2026-04-06 → 2026-04-13 (+7d) |  | 25d → 20d |
| A610 | Building A cable tray | 2026-04-07 → 2026-04-14 (+7d) | 2026-05-05 → 2026-05-12 (+7d) |  | 25d → 20d |
| A620 | Building A UPS installation | 2026-05-06 → 2026-05-13 (+7d) | 2026-05-25 → 2026-06-01 (+7d) |  | 25d → 20d |
| B210 | Building B steel erection |  |  | 76% → 88% |  |
| B230 | Building B envelope and façade |  | 2026-03-27 → 2026-04-01 (+5d) | 71% → 77% | 28d → 25d |
| B430 | Building B install switchgear | 2026-07-08 → 2026-07-29 (+21d) | 2026-08-05 → 2026-08-26 (+21d) |  | -44d → -59d |
| B510 | Building B CRAH units | 2026-03-30 → 2026-04-02 (+3d) | 2026-04-27 → 2026-04-30 (+3d) |  | 70d → 67d |
| B600 | Building B raised floor and containment | 2026-03-30 → 2026-04-02 (+3d) | 2026-05-06 → 2026-05-11 (+5d) |  | 28d → 25d |
| B610 | Building B cable tray | 2026-05-07 → 2026-05-12 (+5d) | 2026-06-04 → 2026-06-09 (+5d) |  | 28d → 25d |
| B620 | Building B UPS installation | 2026-06-05 → 2026-06-10 (+5d) | 2026-06-24 → 2026-06-29 (+5d) |  | 28d → 25d |

## Version 30 (data date 2026-03-30, saved 2026-03-30, file week_30.xer)

Note of the change: Ship end-to-end Baseline with Streamlit dashboard and 3D campus viz.

Last finish stays 2027-03-18. Complete tasks 11 → 12.

Changed:

| ID | Task | Start | Finish | Duration | Complete | Total float |
| --- | --- | --- | --- | --- | --- | --- |
| P300 | Switchgear fabrication and delivery |  | 2026-07-28 → 2026-08-11 (+14d) | 146d → 156d | 37% → 38% | -80d → -90d |
| P310 | Transformer fabrication and delivery |  |  |  | 34% → 36% |  |
| P320 | Generator fabrication and delivery |  | 2026-07-24 → 2026-08-14 (+21d) |  | 47% → 41% | -26d → -41d |
| E410 | Utility interconnect |  |  |  | 52% → 62% |  |
| E450 | Set and test generators | 2026-07-27 → 2026-08-17 (+21d) | 2026-08-24 → 2026-09-14 (+21d) |  |  | -26d → -41d |
| A220 | Building A roofing |  |  |  | 57% → 81% |  |
| A430 | Building A install switchgear | 2026-07-29 → 2026-08-12 (+14d) | 2026-08-26 → 2026-09-09 (+14d) |  |  | -80d → -90d |
| A510 | Building A CRAH units |  |  |  | 43% → 67% |  |
| A600 | Building A raised floor and containment |  |  |  | 43% → 61% |  |
| B210 | Building B steel erection |  | 2026-03-27 A |  | 88% → 100% | 7d → none |
| B230 | Building B envelope and façade |  |  |  | 77% → 91% |  |
| B430 | Building B install switchgear | 2026-07-29 → 2026-08-12 (+14d) | 2026-08-26 → 2026-09-09 (+14d) |  |  | -59d → -69d |

## Version 31 (data date 2026-04-06, saved 2026-04-06, file week_31.xer)

Note of the change: Ship end-to-end Baseline with Streamlit dashboard and 3D campus viz.

Last finish 2027-03-18 → 2027-03-25 (+7d). Complete tasks 12 → 14.

Changed:

| ID | Task | Start | Finish | Duration | Complete | Total float |
| --- | --- | --- | --- | --- | --- | --- |
| A800 | Building A energized | 2026-12-10 → 2026-12-17 (+7d) | 2026-12-10 → 2026-12-17 (+7d) |  |  | -128d → -133d |
| A900 | Building A ready for service | 2027-03-18 → 2027-03-25 (+7d) | 2027-03-18 → 2027-03-25 (+7d) |  |  | -118d → -123d |
| B800 | Building B energized | 2026-12-10 → 2026-12-17 (+7d) | 2026-12-10 → 2026-12-17 (+7d) |  |  | -107d → -112d |
| B900 | Building B ready for service | 2027-03-18 → 2027-03-25 (+7d) | 2027-03-18 → 2027-03-25 (+7d) |  |  | -93d → -98d |
| P300 | Switchgear fabrication and delivery |  |  |  | 38% → 41% |  |
| P310 | Transformer fabrication and delivery |  | 2026-10-13 → 2026-10-20 (+7d) | 222d → 227d | 36% → 37% | -128d → -133d |
| P320 | Generator fabrication and delivery |  |  |  | 41% → 44% |  |
| E410 | Utility interconnect |  |  |  | 62% → 72% |  |
| E420 | Set and test main transformers | 2026-10-14 → 2026-10-21 (+7d) | 2026-11-02 → 2026-11-09 (+7d) |  |  | -128d → -133d |
| A220 | Building A roofing |  | 2026-04-02 A |  | 81% → 100% | -1d → none |
| A440 | Building A medium-voltage feeders | 2026-11-03 → 2026-11-10 (+7d) | 2026-12-10 → 2026-12-17 (+7d) |  |  | -128d → -133d |
| A500 | Building A install chillers | 2026-04-03 A |  |  | 0% → 4% |  |
| A510 | Building A CRAH units |  |  |  | 67% → 90% |  |
| A600 | Building A raised floor and containment |  |  |  | 61% → 79% |  |
| A700 | Building A L2 installation checks | 2026-12-11 → 2026-12-18 (+7d) | 2026-12-30 → 2027-01-06 (+7d) |  |  | -118d → -123d |
| A710 | Building A L3 startup | 2026-12-31 → 2027-01-07 (+7d) | 2027-01-28 → 2027-02-04 (+7d) |  |  | -118d → -123d |
| A720 | Building A L4 functional testing | 2027-01-29 → 2027-02-05 (+7d) | 2027-02-26 → 2027-03-05 (+7d) |  |  | -118d → -123d |
| A730 | Building A L5 integrated systems test | 2027-03-01 → 2027-03-08 (+7d) | 2027-03-18 → 2027-03-25 (+7d) |  |  | -118d → -123d |
| B220 | Building B roofing | 2026-03-30 A |  |  | 0% → 24% |  |
| B230 | Building B envelope and façade |  | 2026-04-01 A |  | 91% → 100% | 25d → none |
| B440 | Building B medium-voltage feeders | 2026-11-03 → 2026-11-10 (+7d) | 2026-12-10 → 2026-12-17 (+7d) |  |  | -107d → -112d |
| B510 | Building B CRAH units | 2026-04-02 A |  |  | 0% → 10% |  |
| B600 | Building B raised floor and containment | 2026-04-02 A |  |  | 0% → 7% |  |
| B700 | Building B L2 installation checks | 2026-12-11 → 2026-12-18 (+7d) | 2026-12-30 → 2027-01-06 (+7d) |  |  | -93d → -98d |
| B710 | Building B L3 startup | 2026-12-31 → 2027-01-07 (+7d) | 2027-01-28 → 2027-02-04 (+7d) |  |  | -93d → -98d |
| B720 | Building B L4 functional testing | 2027-01-29 → 2027-02-05 (+7d) | 2027-02-26 → 2027-03-05 (+7d) |  |  | -93d → -98d |
| B730 | Building B L5 integrated systems test | 2027-03-01 → 2027-03-08 (+7d) | 2027-03-18 → 2027-03-25 (+7d) |  |  | -93d → -98d |

## Version 32 (data date 2026-04-13, saved 2026-04-13, file week_32.xer)

Note of the change: Ship end-to-end Baseline with Streamlit dashboard and 3D campus viz.

Last finish 2027-03-25 → 2027-04-22 (+28d). Complete tasks 14 → 15.

Changed:

| ID | Task | Start | Finish | Complete | Total float |
| --- | --- | --- | --- | --- | --- |
| A800 | Building A energized | 2026-12-17 → 2027-01-14 (+28d) | 2026-12-17 → 2027-01-14 (+28d) |  | -133d → -153d |
| A900 | Building A ready for service | 2027-03-25 → 2027-04-22 (+28d) | 2027-03-25 → 2027-04-22 (+28d) |  | -123d → -143d |
| B800 | Building B energized | 2026-12-17 → 2027-01-14 (+28d) | 2026-12-17 → 2027-01-14 (+28d) |  | -112d → -132d |
| B900 | Building B ready for service | 2027-03-25 → 2027-04-22 (+28d) | 2027-03-25 → 2027-04-22 (+28d) |  | -98d → -118d |
| P300 | Switchgear fabrication and delivery |  |  | 41% → 44% |  |
| P310 | Transformer fabrication and delivery |  | 2026-10-20 → 2026-11-17 (+28d) | 37% → 31% | -133d → -153d |
| P320 | Generator fabrication and delivery |  |  | 44% → 47% |  |
| E410 | Utility interconnect |  |  | 72% → 82% |  |
| E420 | Set and test main transformers | 2026-10-21 → 2026-11-18 (+28d) | 2026-11-09 → 2026-12-07 (+28d) |  | -133d → -153d |
| A440 | Building A medium-voltage feeders | 2026-11-10 → 2026-12-08 (+28d) | 2026-12-17 → 2027-01-14 (+28d) |  | -133d → -153d |
| A500 | Building A install chillers |  |  | 4% → 21% |  |
| A510 | Building A CRAH units |  | 2026-04-07 A | 90% → 100% | 59d → none |
| A600 | Building A raised floor and containment |  |  | 79% → 96% |  |
| A700 | Building A L2 installation checks | 2026-12-18 → 2027-01-15 (+28d) | 2027-01-06 → 2027-02-03 (+28d) |  | -123d → -143d |
| A710 | Building A L3 startup | 2027-01-07 → 2027-02-04 (+28d) | 2027-02-04 → 2027-03-04 (+28d) |  | -123d → -143d |
| A720 | Building A L4 functional testing | 2027-02-05 → 2027-03-05 (+28d) | 2027-03-05 → 2027-04-02 (+28d) |  | -123d → -143d |
| A730 | Building A L5 integrated systems test | 2027-03-08 → 2027-04-05 (+28d) | 2027-03-25 → 2027-04-22 (+28d) |  | -123d → -143d |
| B220 | Building B roofing |  |  | 24% → 48% |  |
| B440 | Building B medium-voltage feeders | 2026-11-10 → 2026-12-08 (+28d) | 2026-12-17 → 2027-01-14 (+28d) |  | -112d → -132d |
| B510 | Building B CRAH units |  |  | 10% → 33% |  |
| B600 | Building B raised floor and containment |  |  | 7% → 25% |  |
| B700 | Building B L2 installation checks | 2026-12-18 → 2027-01-15 (+28d) | 2027-01-06 → 2027-02-03 (+28d) |  | -98d → -118d |
| B710 | Building B L3 startup | 2027-01-07 → 2027-02-04 (+28d) | 2027-02-04 → 2027-03-04 (+28d) |  | -98d → -118d |
| B720 | Building B L4 functional testing | 2027-02-05 → 2027-03-05 (+28d) | 2027-03-05 → 2027-04-02 (+28d) |  | -98d → -118d |
| B730 | Building B L5 integrated systems test | 2027-03-08 → 2027-04-05 (+28d) | 2027-03-25 → 2027-04-22 (+28d) |  | -98d → -118d |

## Version 33 (data date 2026-04-20, saved 2026-04-20, file week_33.xer)

Note of the change: Ship end-to-end Baseline with Streamlit dashboard and 3D campus viz.

Last finish stays 2027-04-22. Complete tasks 15 → 16.

Changed:

| ID | Task | Start | Finish | Complete | Total float |
| --- | --- | --- | --- | --- | --- |
| P300 | Switchgear fabrication and delivery |  |  | 44% → 47% |  |
| P310 | Transformer fabrication and delivery |  |  | 31% → 33% |  |
| P320 | Generator fabrication and delivery |  |  | 47% → 50% |  |
| E410 | Utility interconnect |  |  | 82% → 92% |  |
| A500 | Building A install chillers |  | 2026-05-12 → 2026-05-15 (+3d) | 21% → 29% | -1d → -4d |
| A520 | Building A chilled water piping | 2026-05-13 → 2026-05-18 (+5d) | 2026-06-30 → 2026-07-03 (+3d) |  | -1d → -4d |
| A600 | Building A raised floor and containment |  | 2026-04-13 A | 96% → 100% | 20d → none |
| A610 | Building A cable tray | 2026-04-14 A |  | 0% → 19% |  |
| B220 | Building B roofing |  |  | 48% → 71% |  |
| B510 | Building B CRAH units |  |  | 33% → 57% |  |
| B600 | Building B raised floor and containment |  |  | 25% → 43% |  |

## Version 34 (data date 2026-04-27, saved 2026-04-27, file week_34.xer)

Note of the change: Ship end-to-end Baseline with Streamlit dashboard and 3D campus viz.

Last finish stays 2027-04-22. Complete tasks 16 → 17.

Changed:

| ID | Task | Finish | Complete | Total float |
| --- | --- | --- | --- | --- |
| P300 | Switchgear fabrication and delivery |  | 47% → 51% |  |
| P310 | Transformer fabrication and delivery |  | 33% → 35% |  |
| P320 | Generator fabrication and delivery |  | 50% → 53% |  |
| E410 | Utility interconnect | 2026-04-23 A | 92% → 100% | 37d → none |
| A500 | Building A install chillers |  | 29% → 46% |  |
| A610 | Building A cable tray |  | 19% → 43% |  |
| B220 | Building B roofing |  | 71% → 95% |  |
| B510 | Building B CRAH units |  | 57% → 81% |  |
| B600 | Building B raised floor and containment |  | 43% → 61% |  |

## Version 35 (data date 2026-05-04, saved 2026-05-04, file week_35.xer)

Note of the change: Ship end-to-end Baseline with Streamlit dashboard and 3D campus viz.

Last finish stays 2027-04-22. Complete tasks 17 → 18.

Changed:

| ID | Task | Start | Finish | Complete | Total float |
| --- | --- | --- | --- | --- | --- |
| P300 | Switchgear fabrication and delivery |  |  | 51% → 54% |  |
| P310 | Transformer fabrication and delivery |  |  | 35% → 37% |  |
| P320 | Generator fabrication and delivery |  | 2026-08-14 → 2026-08-28 (+14d) | 53% → 50% | -41d → -51d |
| E450 | Set and test generators | 2026-08-17 → 2026-08-31 (+14d) | 2026-09-14 → 2026-09-28 (+14d) |  | -41d → -51d |
| A500 | Building A install chillers |  | 2026-05-15 → 2026-05-27 (+12d) | 46% → 36% | -4d → -12d |
| A520 | Building A chilled water piping | 2026-05-18 → 2026-05-28 (+10d) | 2026-07-03 → 2026-07-15 (+12d) |  | -4d → -12d |
| A610 | Building A cable tray |  |  | 43% → 67% |  |
| B220 | Building B roofing |  | 2026-04-27 → 2026-05-07 (+10d) | 95% → 81% | 7d → -1d |
| B500 | Building B install chillers | 2026-04-28 A |  | 0% → 14% |  |
| B510 | Building B CRAH units |  | 2026-04-30 A | 81% → 100% | 67d → none |
| B600 | Building B raised floor and containment |  |  | 61% → 79% |  |

## Version 36 (data date 2026-05-11, saved 2026-05-11, file week_36.xer)

Note of the change: Ship end-to-end Baseline with Streamlit dashboard and 3D campus viz.

Last finish 2027-04-22 → 2027-05-04 (+12d). Complete tasks 18 → 19.

Changed:

| ID | Task | Start | Finish | Duration | Complete | Total float |
| --- | --- | --- | --- | --- | --- | --- |
| A800 | Building A energized | 2027-01-14 → 2027-01-26 (+12d) | 2027-01-14 → 2027-01-26 (+12d) |  |  | -153d → -161d |
| A900 | Building A ready for service | 2027-04-22 → 2027-05-04 (+12d) | 2027-04-22 → 2027-05-04 (+12d) |  |  | -143d → -151d |
| B800 | Building B energized | 2027-01-14 → 2027-01-26 (+12d) | 2027-01-14 → 2027-01-26 (+12d) |  |  | -132d → -140d |
| B900 | Building B ready for service | 2027-04-22 → 2027-05-04 (+12d) | 2027-04-22 → 2027-05-04 (+12d) |  |  | -118d → -126d |
| P300 | Switchgear fabrication and delivery |  |  |  | 54% → 57% |  |
| P310 | Transformer fabrication and delivery |  | 2026-11-17 → 2026-11-27 (+10d) | 227d → 235d | 37% → 38% | -153d → -161d |
| P320 | Generator fabrication and delivery |  | 2026-08-28 → 2026-09-11 (+14d) |  | 50% → 47% | -51d → -61d |
| E420 | Set and test main transformers | 2026-11-18 → 2026-11-30 (+12d) | 2026-12-07 → 2026-12-17 (+10d) |  |  | -153d → -161d |
| E450 | Set and test generators | 2026-08-31 → 2026-09-14 (+14d) | 2026-09-28 → 2026-10-12 (+14d) |  |  | -51d → -61d |
| A440 | Building A medium-voltage feeders | 2026-12-08 → 2026-12-18 (+10d) | 2027-01-14 → 2027-01-26 (+12d) |  |  | -153d → -161d |
| A500 | Building A install chillers |  |  |  | 36% → 54% |  |
| A610 | Building A cable tray |  |  |  | 67% → 90% |  |
| A700 | Building A L2 installation checks | 2027-01-15 → 2027-01-27 (+12d) | 2027-02-03 → 2027-02-15 (+12d) |  |  | -143d → -151d |
| A710 | Building A L3 startup | 2027-02-04 → 2027-02-16 (+12d) | 2027-03-04 → 2027-03-16 (+12d) |  |  | -143d → -151d |
| A720 | Building A L4 functional testing | 2027-03-05 → 2027-03-17 (+12d) | 2027-04-02 → 2027-04-14 (+12d) |  |  | -143d → -151d |
| A730 | Building A L5 integrated systems test | 2027-04-05 → 2027-04-15 (+10d) | 2027-04-22 → 2027-05-04 (+12d) |  |  | -143d → -151d |
| B220 | Building B roofing |  | 2026-05-07 A |  | 81% → 100% | -1d → none |
| B440 | Building B medium-voltage feeders | 2026-12-08 → 2026-12-18 (+10d) | 2027-01-14 → 2027-01-26 (+12d) |  |  | -132d → -140d |
| B500 | Building B install chillers |  |  |  | 14% → 32% |  |
| B600 | Building B raised floor and containment |  | 2026-05-11 → 2026-05-18 (+7d) | 28d → 33d | 79% → 82% | 25d → 20d |
| B610 | Building B cable tray | 2026-05-12 → 2026-05-19 (+7d) | 2026-06-09 → 2026-06-16 (+7d) |  |  | 25d → 20d |
| B620 | Building B UPS installation | 2026-06-10 → 2026-06-17 (+7d) | 2026-06-29 → 2026-07-06 (+7d) |  |  | 25d → 20d |
| B700 | Building B L2 installation checks | 2027-01-15 → 2027-01-27 (+12d) | 2027-02-03 → 2027-02-15 (+12d) |  |  | -118d → -126d |
| B710 | Building B L3 startup | 2027-02-04 → 2027-02-16 (+12d) | 2027-03-04 → 2027-03-16 (+12d) |  |  | -118d → -126d |
| B720 | Building B L4 functional testing | 2027-03-05 → 2027-03-17 (+12d) | 2027-04-02 → 2027-04-14 (+12d) |  |  | -118d → -126d |
| B730 | Building B L5 integrated systems test | 2027-04-05 → 2027-04-15 (+10d) | 2027-04-22 → 2027-05-04 (+12d) |  |  | -118d → -126d |

## Version 37 (data date 2026-05-18, saved 2026-05-18, file week_37.xer)

Note of the change: Ship end-to-end Baseline with Streamlit dashboard and 3D campus viz.

Last finish 2027-05-04 → 2027-06-01 (+28d). Complete tasks 19 → 20.

Changed:

| ID | Task | Start | Finish | Duration | Complete | Total float |
| --- | --- | --- | --- | --- | --- | --- |
| A800 | Building A energized | 2027-01-26 → 2027-02-23 (+28d) | 2027-01-26 → 2027-02-23 (+28d) |  |  | -161d → -181d |
| A900 | Building A ready for service | 2027-05-04 → 2027-06-01 (+28d) | 2027-05-04 → 2027-06-01 (+28d) |  |  | -151d → -171d |
| B800 | Building B energized | 2027-01-26 → 2027-02-23 (+28d) | 2027-01-26 → 2027-02-23 (+28d) |  |  | -140d → -160d |
| B900 | Building B ready for service | 2027-05-04 → 2027-06-01 (+28d) | 2027-05-04 → 2027-06-01 (+28d) |  |  | -126d → -146d |
| P300 | Switchgear fabrication and delivery |  |  |  | 57% → 60% |  |
| P310 | Transformer fabrication and delivery |  | 2026-11-27 → 2026-12-25 (+28d) |  | 38% → 32% | -161d → -181d |
| P320 | Generator fabrication and delivery |  |  |  | 47% → 50% |  |
| E420 | Set and test main transformers | 2026-11-30 → 2026-12-28 (+28d) | 2026-12-17 → 2027-01-14 (+28d) |  |  | -161d → -181d |
| A440 | Building A medium-voltage feeders | 2026-12-18 → 2027-01-15 (+28d) | 2027-01-26 → 2027-02-23 (+28d) |  |  | -161d → -181d |
| A500 | Building A install chillers |  |  |  | 54% → 71% |  |
| A610 | Building A cable tray |  | 2026-05-12 A |  | 90% → 100% | 20d → none |
| A620 | Building A UPS installation | 2026-05-13 A | 2026-06-01 → 2026-06-04 (+3d) | 14d → 17d | 0% → 18% | 20d → 17d |
| A700 | Building A L2 installation checks | 2027-01-27 → 2027-02-24 (+28d) | 2027-02-15 → 2027-03-15 (+28d) |  |  | -151d → -171d |
| A710 | Building A L3 startup | 2027-02-16 → 2027-03-16 (+28d) | 2027-03-16 → 2027-04-13 (+28d) |  |  | -151d → -171d |
| A720 | Building A L4 functional testing | 2027-03-17 → 2027-04-14 (+28d) | 2027-04-14 → 2027-05-12 (+28d) |  |  | -151d → -171d |
| A730 | Building A L5 integrated systems test | 2027-04-15 → 2027-05-13 (+28d) | 2027-05-04 → 2027-06-01 (+28d) |  |  | -151d → -171d |
| B440 | Building B medium-voltage feeders | 2026-12-18 → 2027-01-15 (+28d) | 2027-01-26 → 2027-02-23 (+28d) |  |  | -140d → -160d |
| B500 | Building B install chillers |  |  |  | 32% → 50% |  |
| B600 | Building B raised floor and containment |  |  |  | 82% → 97% |  |
| B700 | Building B L2 installation checks | 2027-01-27 → 2027-02-24 (+28d) | 2027-02-15 → 2027-03-15 (+28d) |  |  | -126d → -146d |
| B710 | Building B L3 startup | 2027-02-16 → 2027-03-16 (+28d) | 2027-03-16 → 2027-04-13 (+28d) |  |  | -126d → -146d |
| B720 | Building B L4 functional testing | 2027-03-17 → 2027-04-14 (+28d) | 2027-04-14 → 2027-05-12 (+28d) |  |  | -126d → -146d |
| B730 | Building B L5 integrated systems test | 2027-04-15 → 2027-05-13 (+28d) | 2027-05-04 → 2027-06-01 (+28d) |  |  | -126d → -146d |

## Version 38 (data date 2026-05-25, saved 2026-05-25, file week_38.xer)

Note of the change: Ship end-to-end Baseline with Streamlit dashboard and 3D campus viz.

Last finish stays 2027-06-01. Complete tasks 20 → 21.

Changed:

| ID | Task | Start | Finish | Complete | Total float |
| --- | --- | --- | --- | --- | --- |
| P300 | Switchgear fabrication and delivery |  |  | 60% → 63% |  |
| P310 | Transformer fabrication and delivery |  |  | 32% → 34% |  |
| P320 | Generator fabrication and delivery |  |  | 50% → 53% |  |
| A500 | Building A install chillers |  |  | 71% → 89% |  |
| A620 | Building A UPS installation |  |  | 18% → 47% |  |
| B500 | Building B install chillers |  |  | 50% → 68% |  |
| B600 | Building B raised floor and containment |  | 2026-05-18 A | 97% → 100% | 20d → none |
| B610 | Building B cable tray | 2026-05-19 A |  | 0% → 19% |  |

## Version 39 (data date 2026-06-01, saved 2026-06-01, file week_39.xer)

Note of the change: Ship end-to-end Baseline with Streamlit dashboard and 3D campus viz.

Last finish stays 2027-06-01. Complete tasks 21 → 22.

Changed:

| ID | Task | Start | Finish | Complete | Total float |
| --- | --- | --- | --- | --- | --- |
| P300 | Switchgear fabrication and delivery |  | 2026-08-11 → 2026-09-08 (+28d) | 63% → 54% | -90d → -110d |
| P310 | Transformer fabrication and delivery |  |  | 34% → 36% |  |
| P320 | Generator fabrication and delivery |  |  | 53% → 56% |  |
| A430 | Building A install switchgear | 2026-08-12 → 2026-09-09 (+28d) | 2026-09-09 → 2026-10-07 (+28d) |  | -90d → -110d |
| A500 | Building A install chillers |  | 2026-05-27 A | 89% → 100% | -12d → none |
| A520 | Building A chilled water piping | 2026-05-28 A |  | 0% → 6% |  |
| A620 | Building A UPS installation |  |  | 47% → 76% |  |
| B430 | Building B install switchgear | 2026-08-12 → 2026-09-09 (+28d) | 2026-09-09 → 2026-10-07 (+28d) |  | -69d → -89d |
| B500 | Building B install chillers |  |  | 68% → 86% |  |
| B610 | Building B cable tray |  |  | 19% → 43% |  |

## Version 40 (data date 2026-06-08, saved 2026-06-08, file week_40.xer)

Note of the change: Ship end-to-end Baseline with Streamlit dashboard and 3D campus viz.

Last finish stays 2027-06-01. Complete tasks 22 → 24.

Changed:

| ID | Task | Start | Finish | Complete | Total float |
| --- | --- | --- | --- | --- | --- |
| P300 | Switchgear fabrication and delivery |  |  | 54% → 57% |  |
| P310 | Transformer fabrication and delivery |  |  | 36% → 38% |  |
| P320 | Generator fabrication and delivery |  |  | 56% → 59% |  |
| A520 | Building A chilled water piping |  | 2026-07-15 → 2026-07-27 (+12d) | 6% → 0% | -12d → -20d |
| A620 | Building A UPS installation |  | 2026-06-04 A | 76% → 100% | 17d → none |
| B500 | Building B install chillers |  | 2026-06-04 A | 86% → 100% | 7d → none |
| B520 | Building B chilled water piping | 2026-06-05 A |  | 0% → 3% |  |
| B610 | Building B cable tray |  | 2026-06-16 → 2026-06-19 (+3d) | 43% → 52% | 20d → 17d |
| B620 | Building B UPS installation | 2026-06-17 → 2026-06-22 (+5d) | 2026-07-06 → 2026-07-09 (+3d) |  | 20d → 17d |

## Version 41 (data date 2026-06-15, saved 2026-06-15, file week_41.xer)

Note of the change: Ship end-to-end Baseline with Streamlit dashboard and 3D campus viz.

Last finish stays 2027-06-01.

Changed:

| ID | Task | Start | Finish | Complete | Total float |
| --- | --- | --- | --- | --- | --- |
| P300 | Switchgear fabrication and delivery |  |  | 57% → 60% |  |
| P310 | Transformer fabrication and delivery |  |  | 38% → 40% |  |
| P320 | Generator fabrication and delivery |  | 2026-09-11 → 2026-09-18 (+7d) |  | -61d → -66d |
| E450 | Set and test generators | 2026-09-14 → 2026-09-21 (+7d) | 2026-10-12 → 2026-10-19 (+7d) |  | -61d → -66d |
| A520 | Building A chilled water piping |  |  | 0% → 11% |  |
| B520 | Building B chilled water piping |  | 2026-07-23 → 2026-07-28 (+5d) | 3% → 9% | 7d → 4d |
| B610 | Building B cable tray |  |  | 52% → 76% |  |

## Version 42 (data date 2026-06-22, saved 2026-06-22, file week_42.xer)

Note of the change: Ship end-to-end Baseline with Streamlit dashboard and 3D campus viz.

Last finish stays 2027-06-01. Complete tasks 24 → 25.

Changed:

| ID | Task | Start | Finish | Duration | Complete | Total float |
| --- | --- | --- | --- | --- | --- | --- |
| P300 | Switchgear fabrication and delivery |  | 2026-09-08 → 2026-10-06 (+28d) | 156d → 176d | 60% → 56% | -110d → -130d |
| P310 | Transformer fabrication and delivery |  |  |  | 40% → 43% |  |
| P320 | Generator fabrication and delivery |  | 2026-09-18 → 2026-10-02 (+14d) | 170d → 180d | 59% → 58% | -66d → -76d |
| E450 | Set and test generators | 2026-09-21 → 2026-10-05 (+14d) | 2026-10-19 → 2026-11-02 (+14d) |  |  | -66d → -76d |
| A430 | Building A install switchgear | 2026-09-09 → 2026-10-07 (+28d) | 2026-10-07 → 2026-11-04 (+28d) |  |  | -110d → -130d |
| A520 | Building A chilled water piping |  |  |  | 11% → 26% |  |
| B430 | Building B install switchgear | 2026-09-09 → 2026-10-07 (+28d) | 2026-10-07 → 2026-11-04 (+28d) |  |  | -89d → -109d |
| B520 | Building B chilled water piping |  |  |  | 9% → 23% |  |
| B610 | Building B cable tray |  | 2026-06-19 A |  | 76% → 100% | 17d → none |

## Version 43 (data date 2026-06-29, saved 2026-06-29, file week_43.xer)

Note of the change: Ship end-to-end Baseline with Streamlit dashboard and 3D campus viz.

Last finish 2027-06-01 → 2027-06-15 (+14d).

Changed:

| ID | Task | Start | Finish | Complete | Total float |
| --- | --- | --- | --- | --- | --- |
| A800 | Building A energized | 2027-02-23 → 2027-03-09 (+14d) | 2027-02-23 → 2027-03-09 (+14d) |  | -181d → -191d |
| A900 | Building A ready for service | 2027-06-01 → 2027-06-15 (+14d) | 2027-06-01 → 2027-06-15 (+14d) |  | -171d → -181d |
| B800 | Building B energized | 2027-02-23 → 2027-03-09 (+14d) | 2027-02-23 → 2027-03-09 (+14d) |  | -160d → -170d |
| B900 | Building B ready for service | 2027-06-01 → 2027-06-15 (+14d) | 2027-06-01 → 2027-06-15 (+14d) |  | -146d → -156d |
| P300 | Switchgear fabrication and delivery |  |  | 56% → 59% |  |
| P310 | Transformer fabrication and delivery |  | 2026-12-25 → 2027-01-08 (+14d) | 43% → 40% | -181d → -191d |
| P320 | Generator fabrication and delivery |  | 2026-10-02 → 2026-10-14 (+12d) | 58% → 57% | -76d → -84d |
| E420 | Set and test main transformers | 2026-12-28 → 2027-01-11 (+14d) | 2027-01-14 → 2027-01-28 (+14d) |  | -181d → -191d |
| E450 | Set and test generators | 2026-10-05 → 2026-10-15 (+10d) | 2026-11-02 → 2026-11-12 (+10d) |  | -76d → -84d |
| A440 | Building A medium-voltage feeders | 2027-01-15 → 2027-01-29 (+14d) | 2027-02-23 → 2027-03-09 (+14d) |  | -181d → -191d |
| A520 | Building A chilled water piping |  |  | 26% → 40% |  |
| A700 | Building A L2 installation checks | 2027-02-24 → 2027-03-10 (+14d) | 2027-03-15 → 2027-03-29 (+14d) |  | -171d → -181d |
| A710 | Building A L3 startup | 2027-03-16 → 2027-03-30 (+14d) | 2027-04-13 → 2027-04-27 (+14d) |  | -171d → -181d |
| A720 | Building A L4 functional testing | 2027-04-14 → 2027-04-28 (+14d) | 2027-05-12 → 2027-05-26 (+14d) |  | -171d → -181d |
| A730 | Building A L5 integrated systems test | 2027-05-13 → 2027-05-27 (+14d) | 2027-06-01 → 2027-06-15 (+14d) |  | -171d → -181d |
| B440 | Building B medium-voltage feeders | 2027-01-15 → 2027-01-29 (+14d) | 2027-02-23 → 2027-03-09 (+14d) |  | -160d → -170d |
| B520 | Building B chilled water piping |  |  | 23% → 37% |  |
| B620 | Building B UPS installation | 2026-06-22 A |  | 0% → 36% |  |
| B700 | Building B L2 installation checks | 2027-02-24 → 2027-03-10 (+14d) | 2027-03-15 → 2027-03-29 (+14d) |  | -146d → -156d |
| B710 | Building B L3 startup | 2027-03-16 → 2027-03-30 (+14d) | 2027-04-13 → 2027-04-27 (+14d) |  | -146d → -156d |
| B720 | Building B L4 functional testing | 2027-04-14 → 2027-04-28 (+14d) | 2027-05-12 → 2027-05-26 (+14d) |  | -146d → -156d |
| B730 | Building B L5 integrated systems test | 2027-05-13 → 2027-05-27 (+14d) | 2027-06-01 → 2027-06-15 (+14d) |  | -146d → -156d |

## Version 44 (data date 2026-07-06, saved 2026-07-06, file week_44.xer)

Note of the change: Ship end-to-end Baseline with Streamlit dashboard and 3D campus viz.

Last finish stays 2027-06-15.

Changed:

| ID | Task | Start | Finish | Complete | Total float |
| --- | --- | --- | --- | --- | --- |
| P300 | Switchgear fabrication and delivery |  |  | 59% → 62% |  |
| P310 | Transformer fabrication and delivery |  |  | 40% → 43% |  |
| P320 | Generator fabrication and delivery |  | 2026-10-14 → 2026-10-26 (+12d) | 57% → 55% | -84d → -92d |
| E450 | Set and test generators | 2026-10-15 → 2026-10-27 (+12d) | 2026-11-12 → 2026-11-24 (+12d) |  | -84d → -92d |
| A520 | Building A chilled water piping |  |  | 40% → 54% |  |
| B520 | Building B chilled water piping |  |  | 37% → 51% |  |
| B620 | Building B UPS installation |  |  | 36% → 71% |  |

## Version 45 (data date 2026-07-13, saved 2026-07-13, file week_45.xer)

Note of the change: Ship end-to-end Baseline with Streamlit dashboard and 3D campus viz.

Last finish stays 2027-06-15. Complete tasks 25 → 26.

Changed:

| ID | Task | Finish | Complete | Total float |
| --- | --- | --- | --- | --- |
| P300 | Switchgear fabrication and delivery |  | 62% → 65% |  |
| P310 | Transformer fabrication and delivery |  | 43% → 45% |  |
| P320 | Generator fabrication and delivery |  | 55% → 58% |  |
| A520 | Building A chilled water piping |  | 54% → 69% |  |
| B520 | Building B chilled water piping |  | 51% → 66% |  |
| B620 | Building B UPS installation | 2026-07-09 A | 71% → 100% | 17d → none |

## Version 46 (data date 2026-07-20, saved 2026-07-20, file week_46.xer)

Note of the change: Ship end-to-end Baseline with Streamlit dashboard and 3D campus viz.

Last finish 2027-06-15 → 2027-07-13 (+28d).

Changed:

| ID | Task | Start | Finish | Complete | Total float |
| --- | --- | --- | --- | --- | --- |
| A800 | Building A energized | 2027-03-09 → 2027-04-06 (+28d) | 2027-03-09 → 2027-04-06 (+28d) |  | -191d → -211d |
| A900 | Building A ready for service | 2027-06-15 → 2027-07-13 (+28d) | 2027-06-15 → 2027-07-13 (+28d) |  | -181d → -201d |
| B800 | Building B energized | 2027-03-09 → 2027-04-06 (+28d) | 2027-03-09 → 2027-04-06 (+28d) |  | -170d → -190d |
| B900 | Building B ready for service | 2027-06-15 → 2027-07-13 (+28d) | 2027-06-15 → 2027-07-13 (+28d) |  | -156d → -176d |
| P300 | Switchgear fabrication and delivery |  |  | 65% → 68% |  |
| P310 | Transformer fabrication and delivery |  | 2027-01-08 → 2027-02-05 (+28d) | 45% → 38% | -191d → -211d |
| P320 | Generator fabrication and delivery |  |  | 58% → 61% |  |
| E420 | Set and test main transformers | 2027-01-11 → 2027-02-08 (+28d) | 2027-01-28 → 2027-02-25 (+28d) |  | -191d → -211d |
| A440 | Building A medium-voltage feeders | 2027-01-29 → 2027-02-26 (+28d) | 2027-03-09 → 2027-04-06 (+28d) |  | -191d → -211d |
| A520 | Building A chilled water piping |  |  | 69% → 83% |  |
| A700 | Building A L2 installation checks | 2027-03-10 → 2027-04-07 (+28d) | 2027-03-29 → 2027-04-26 (+28d) |  | -181d → -201d |
| A710 | Building A L3 startup | 2027-03-30 → 2027-04-27 (+28d) | 2027-04-27 → 2027-05-25 (+28d) |  | -181d → -201d |
| A720 | Building A L4 functional testing | 2027-04-28 → 2027-05-26 (+28d) | 2027-05-26 → 2027-06-23 (+28d) |  | -181d → -201d |
| A730 | Building A L5 integrated systems test | 2027-05-27 → 2027-06-24 (+28d) | 2027-06-15 → 2027-07-13 (+28d) |  | -181d → -201d |
| B440 | Building B medium-voltage feeders | 2027-01-29 → 2027-02-26 (+28d) | 2027-03-09 → 2027-04-06 (+28d) |  | -170d → -190d |
| B520 | Building B chilled water piping |  |  | 66% → 80% |  |
| B700 | Building B L2 installation checks | 2027-03-10 → 2027-04-07 (+28d) | 2027-03-29 → 2027-04-26 (+28d) |  | -156d → -176d |
| B710 | Building B L3 startup | 2027-03-30 → 2027-04-27 (+28d) | 2027-04-27 → 2027-05-25 (+28d) |  | -156d → -176d |
| B720 | Building B L4 functional testing | 2027-04-28 → 2027-05-26 (+28d) | 2027-05-26 → 2027-06-23 (+28d) |  | -156d → -176d |
| B730 | Building B L5 integrated systems test | 2027-05-27 → 2027-06-24 (+28d) | 2027-06-15 → 2027-07-13 (+28d) |  | -156d → -176d |

## Version 47 (data date 2026-07-27, saved 2026-07-27, file week_47.xer)

Note of the change: Ship end-to-end Baseline with Streamlit dashboard and 3D campus viz.

Last finish 2027-07-13 → 2027-07-20 (+7d).

Changed:

| ID | Task | Start | Finish | Duration | Complete | Total float |
| --- | --- | --- | --- | --- | --- | --- |
| A800 | Building A energized | 2027-04-06 → 2027-04-13 (+7d) | 2027-04-06 → 2027-04-13 (+7d) |  |  | -211d → -216d |
| A900 | Building A ready for service | 2027-07-13 → 2027-07-20 (+7d) | 2027-07-13 → 2027-07-20 (+7d) |  |  | -201d → -206d |
| B800 | Building B energized | 2027-04-06 → 2027-04-13 (+7d) | 2027-04-06 → 2027-04-13 (+7d) |  |  | -190d → -195d |
| B900 | Building B ready for service | 2027-07-13 → 2027-07-20 (+7d) | 2027-07-13 → 2027-07-20 (+7d) |  |  | -176d → -181d |
| P300 | Switchgear fabrication and delivery |  |  |  | 68% → 70% |  |
| P310 | Transformer fabrication and delivery |  | 2027-02-05 → 2027-02-12 (+7d) | 235d → 240d | 38% → 40% | -211d → -216d |
| P320 | Generator fabrication and delivery |  |  |  | 61% → 63% |  |
| E420 | Set and test main transformers | 2027-02-08 → 2027-02-15 (+7d) | 2027-02-25 → 2027-03-04 (+7d) |  |  | -211d → -216d |
| A440 | Building A medium-voltage feeders | 2027-02-26 → 2027-03-05 (+7d) | 2027-04-06 → 2027-04-13 (+7d) |  |  | -211d → -216d |
| A520 | Building A chilled water piping |  |  |  | 83% → 97% |  |
| A700 | Building A L2 installation checks | 2027-04-07 → 2027-04-14 (+7d) | 2027-04-26 → 2027-05-03 (+7d) |  |  | -201d → -206d |
| A710 | Building A L3 startup | 2027-04-27 → 2027-05-04 (+7d) | 2027-05-25 → 2027-06-01 (+7d) |  |  | -201d → -206d |
| A720 | Building A L4 functional testing | 2027-05-26 → 2027-06-02 (+7d) | 2027-06-23 → 2027-06-30 (+7d) |  |  | -201d → -206d |
| A730 | Building A L5 integrated systems test | 2027-06-24 → 2027-07-01 (+7d) | 2027-07-13 → 2027-07-20 (+7d) |  |  | -201d → -206d |
| B440 | Building B medium-voltage feeders | 2027-02-26 → 2027-03-05 (+7d) | 2027-04-06 → 2027-04-13 (+7d) |  |  | -190d → -195d |
| B520 | Building B chilled water piping |  |  |  | 80% → 94% |  |
| B700 | Building B L2 installation checks | 2027-04-07 → 2027-04-14 (+7d) | 2027-04-26 → 2027-05-03 (+7d) |  |  | -176d → -181d |
| B710 | Building B L3 startup | 2027-04-27 → 2027-05-04 (+7d) | 2027-05-25 → 2027-06-01 (+7d) |  |  | -176d → -181d |
| B720 | Building B L4 functional testing | 2027-05-26 → 2027-06-02 (+7d) | 2027-06-23 → 2027-06-30 (+7d) |  |  | -176d → -181d |
| B730 | Building B L5 integrated systems test | 2027-06-24 → 2027-07-01 (+7d) | 2027-07-13 → 2027-07-20 (+7d) |  |  | -176d → -181d |

## Version 48 (data date 2026-08-03, saved 2026-08-03, file week_48.xer)

Note of the change: Ship end-to-end Baseline with Streamlit dashboard and 3D campus viz.

Last finish stays 2027-07-20. Complete tasks 26 → 28.

Changed:

| ID | Task | Finish | Complete | Total float |
| --- | --- | --- | --- | --- |
| P300 | Switchgear fabrication and delivery |  | 70% → 73% |  |
| P310 | Transformer fabrication and delivery |  | 40% → 42% |  |
| P320 | Generator fabrication and delivery |  | 63% → 66% |  |
| A520 | Building A chilled water piping | 2026-07-27 A | 97% → 100% | -20d → none |
| B520 | Building B chilled water piping | 2026-07-28 A | 94% → 100% | 4d → none |

## Version 49 (data date 2026-08-10, saved 2026-08-10, file week_49.xer)

Note of the change: Ship end-to-end Baseline with Streamlit dashboard and 3D campus viz.

Last finish 2027-07-20 → 2027-07-27 (+7d).

Changed:

| ID | Task | Start | Finish | Complete | Total float |
| --- | --- | --- | --- | --- | --- |
| A800 | Building A energized | 2027-04-13 → 2027-04-20 (+7d) | 2027-04-13 → 2027-04-20 (+7d) |  | -216d → -221d |
| A900 | Building A ready for service | 2027-07-20 → 2027-07-27 (+7d) | 2027-07-20 → 2027-07-27 (+7d) |  | -206d → -211d |
| B800 | Building B energized | 2027-04-13 → 2027-04-20 (+7d) | 2027-04-13 → 2027-04-20 (+7d) |  | -195d → -200d |
| B900 | Building B ready for service | 2027-07-20 → 2027-07-27 (+7d) | 2027-07-20 → 2027-07-27 (+7d) |  | -181d → -186d |
| P300 | Switchgear fabrication and delivery |  |  | 73% → 76% |  |
| P310 | Transformer fabrication and delivery |  | 2027-02-12 → 2027-02-19 (+7d) |  | -216d → -221d |
| P320 | Generator fabrication and delivery |  |  | 66% → 69% |  |
| E420 | Set and test main transformers | 2027-02-15 → 2027-02-22 (+7d) | 2027-03-04 → 2027-03-11 (+7d) |  | -216d → -221d |
| A440 | Building A medium-voltage feeders | 2027-03-05 → 2027-03-12 (+7d) | 2027-04-13 → 2027-04-20 (+7d) |  | -216d → -221d |
| A700 | Building A L2 installation checks | 2027-04-14 → 2027-04-21 (+7d) | 2027-05-03 → 2027-05-10 (+7d) |  | -206d → -211d |
| A710 | Building A L3 startup | 2027-05-04 → 2027-05-11 (+7d) | 2027-06-01 → 2027-06-08 (+7d) |  | -206d → -211d |
| A720 | Building A L4 functional testing | 2027-06-02 → 2027-06-09 (+7d) | 2027-06-30 → 2027-07-07 (+7d) |  | -206d → -211d |
| A730 | Building A L5 integrated systems test | 2027-07-01 → 2027-07-08 (+7d) | 2027-07-20 → 2027-07-27 (+7d) |  | -206d → -211d |
| B440 | Building B medium-voltage feeders | 2027-03-05 → 2027-03-12 (+7d) | 2027-04-13 → 2027-04-20 (+7d) |  | -195d → -200d |
| B700 | Building B L2 installation checks | 2027-04-14 → 2027-04-21 (+7d) | 2027-05-03 → 2027-05-10 (+7d) |  | -181d → -186d |
| B710 | Building B L3 startup | 2027-05-04 → 2027-05-11 (+7d) | 2027-06-01 → 2027-06-08 (+7d) |  | -181d → -186d |
| B720 | Building B L4 functional testing | 2027-06-02 → 2027-06-09 (+7d) | 2027-06-30 → 2027-07-07 (+7d) |  | -181d → -186d |
| B730 | Building B L5 integrated systems test | 2027-07-01 → 2027-07-08 (+7d) | 2027-07-20 → 2027-07-27 (+7d) |  | -181d → -186d |

## Version 50 (data date 2026-08-17, saved 2026-08-17, file week_50.xer)

Note of the change: Ship end-to-end Baseline with Streamlit dashboard and 3D campus viz.

Last finish stays 2027-07-27.

Changed:

| ID | Task | Complete |
| --- | --- | --- |
| P300 | Switchgear fabrication and delivery | 76% → 79% |
| P310 | Transformer fabrication and delivery | 42% → 44% |
| P320 | Generator fabrication and delivery | 69% → 72% |

## Version 51 (data date 2026-08-24, saved 2026-08-24, file week_51.xer)

Note of the change: Ship end-to-end Baseline with Streamlit dashboard and 3D campus viz.

Last finish stays 2027-07-27.

Changed:

| ID | Task | Start | Finish | Duration | Complete | Total float |
| --- | --- | --- | --- | --- | --- | --- |
| P300 | Switchgear fabrication and delivery |  | 2026-10-06 → 2026-10-20 (+14d) | 176d → 186d | 79% → 77% | -130d → -140d |
| P310 | Transformer fabrication and delivery |  |  |  | 44% → 46% |  |
| P320 | Generator fabrication and delivery |  | 2026-10-26 → 2026-11-05 (+10d) |  | 72% → 70% | -92d → -100d |
| E450 | Set and test generators | 2026-10-27 → 2026-11-06 (+10d) | 2026-11-24 → 2026-12-04 (+10d) |  |  | -92d → -100d |
| A430 | Building A install switchgear | 2026-10-07 → 2026-10-21 (+14d) | 2026-11-04 → 2026-11-18 (+14d) |  |  | -130d → -140d |
| B430 | Building B install switchgear | 2026-10-07 → 2026-10-21 (+14d) | 2026-11-04 → 2026-11-18 (+14d) |  |  | -109d → -119d |

## Version 52 (data date 2026-08-31, saved 2026-08-31, file week_52.xer)

Note of the change: Ship end-to-end Baseline with Streamlit dashboard and 3D campus viz.

Last finish stays 2027-07-27.

Changed:

| ID | Task | Start | Finish | Complete | Total float |
| --- | --- | --- | --- | --- | --- |
| P300 | Switchgear fabrication and delivery |  | 2026-10-20 → 2026-10-27 (+7d) |  | -140d → -145d |
| P310 | Transformer fabrication and delivery |  |  | 46% → 48% |  |
| P320 | Generator fabrication and delivery |  |  | 70% → 73% |  |
| A430 | Building A install switchgear | 2026-10-21 → 2026-10-28 (+7d) | 2026-11-18 → 2026-11-25 (+7d) |  | -140d → -145d |
| B430 | Building B install switchgear | 2026-10-21 → 2026-10-28 (+7d) | 2026-11-18 → 2026-11-25 (+7d) |  | -119d → -124d |
